# Gantt AGR-Pangoa-Cubantia-

How a schedule from MS Project changed from version to version. A marks actual dates.

## Version 1 (saved 2017-09-08, file 1_Gantt  AGR-Pangoa-Cubantia.mpp)

Note of the change: Serga

| ID | WBS | Task | Duration | Start | Finish | Predecessors | Complete | Total float |
| --- | --- | --- | --- | --- | --- | --- | --- | --- |
| 1 | 1 | **AGR_ Pangoa Cubantia** | 150d | 2017-08-15 A | 2018-01-11 |  | 9% | 0d |
| 2 | 1.1 | **Hitos** | 150d | 2017-08-15 A | 2018-01-11 |  |  | 0d |
| 3 |  | Firma de contrato | 0d | 2017-08-15 A | 2017-08-15 A |  | 100% |  |
| 4 |  | E:1A Cargo final de búsquedas catastrales, Cargo de carta Tasación | 0d | 2017-09-03 | 2017-09-03 | 3FS+20d |  | 130d |
| 5 |  | E:1B Honorario DC y Lev Observaciones | 0d | 2017-09-23 | 2017-09-23 | 3FS+40d |  | 110d |
| 6 |  | E:2 Informe final de BC y subsanaciones | 0d | 2017-10-13 | 2017-10-13 | 3FS+60d |  | 90d |
| 7 |  | E:3 Rev, Tasaciones, lev. Obs, publicaciones y noticaciones | 0d | 2017-11-12 | 2017-11-12 | 3FS+90d |  | 60d |
| 8 |  | E:4 Inf. total de sujetos pasivos | 0d | 2017-12-22 | 2017-12-22 | 3FS+130d |  | 20d |
| 9 |  | E:5 Proyectos de Resol de Pago en el MTC | 0d | 2018-01-11 | 2018-01-11 | 3FS+150d |  | 0d |
| 10 | 1.2 | **Inicio y Planificación** | 7d | 2017-08-15 A | 2017-08-21 |  | 71% | 0d |
| 11 |  | Conformación de equipo de trabajo | 3d | 2017-08-15 A | 2017-08-17 A |  | 100% |  |
| 12 |  | Acta de Inicio | 2d | 2017-08-18 | 2017-08-19 | 11 |  | 2d |
| 13 |  | Inducción del proyecto | 2d | 2017-08-20 A | 2017-08-21 A | 12 | 100% |  |
| 14 |  | Aprobación del acta de inicio | 0d | 2017-08-21 | 2017-08-21 | 13 |  | 0d |
| 15 | 1.3 | **Ejecución - Seguimiento y Control** | 113d | 2017-08-22 A | 2017-12-12 | 10 | 8% | 30d |
| 16 |  | Revisión de plano guía del tramo en estudio (0/73) | 1d | 2017-08-22 A | 2017-08-22 A |  | 100% |  |
| 17 |  | Revisión de antecedentes por predio (0/73) | 2d | 2017-08-23 A | 2017-08-24 A | 16 | 100% |  |
| 18 |  | Planilla de seguimiento de predios (0/73) | 1d | 2017-08-25 A | 2017-08-25 A | 17 | 100% |  |
| 19 | 1.3.4 | **Búsqueda Catastral** | 52d | 2017-08-23 A | 2017-10-13 | 3FS+8d | 11% | 90d |
| 20 |  | Plano y memoria para búsqueda catastral Est. SUNARP 0/73 | 9d | 2017-08-23 A | 2017-08-31 |  | 90% | 30d |
| 21 |  | E1A | 0d | 2017-09-03 | 2017-09-03 | 3FS+20d |  | 130d |
| 22 |  | Trámite de búsqueda catastral | 20d | 2017-09-01 | 2017-09-20 | 20 |  | 30d |
| 23 |  | Subsanación de observaciones | 18d | 2017-09-03 | 2017-09-20 | 22FF |  | 30d |
| 24 |  | Obtención de búsquedas catastrales | 10d | 2017-09-21 | 2017-09-30 | 23, 22 |  | 30d |
| 25 |  | Interpretación y análisis de búsquedas | 5d | 2017-09-26 | 2017-09-30 | 24SS+5d |  | 30d |
| 26 |  | Clasificación de certificados de búsqueda catastral | 3d | 2017-10-01 | 2017-10-03 | 25 |  | 90d |
| 27 |  | Elaboración de informe | 10d | 2017-10-04 | 2017-10-13 | 26 |  | 90d |
| 28 |  | E2 | 0d | 2017-10-13 | 2017-10-13 | 27 |  | 90d |
| 29 | 1.3.5 | **Actualización de expedientes, (act. Inventario de activos)** | 32d | 2017-08-23 A | 2017-09-23 | 3FS+8d | 17% | 110d |
| 30 |  | Notificación de visita | 3d | 2017-08-23 | 2017-08-25 |  |  | 2.8d |
| 31 |  | Recorrido de campo | 7d | 2017-08-26 A | 2017-09-01 | 30 | 40% | 132d |
| 32 |  | Identificación / propiedad / posesión de sujeto pasivo | 7d | 2017-08-26 A | 2017-09-01 | 31SS | 40% | 132d |
| 33 |  | PP, MD | 8d | 2017-08-23 | 2017-08-30 | 20SS |  | 134d |
| 34 |  | Perjuicio económico | 8d | 2017-08-23 | 2017-08-30 | 20SS |  | 134d |
| 35 |  | E1A Presentación de Exp. a la DC | 0d | 2017-09-01 | 2017-09-01 | 31 |  | 132d |
| 36 |  | E1B Carta de DC de monto servicio de tasación/Informe de Rev. (de requerir). | 0d | 2017-09-23 | 2017-09-23 | 31SF+29d |  | 110d |
| 37 | 1.3.6 | **Gestión de trato directo** | 73d | 2017-10-01 | 2017-12-12 |  |  | 30d |
| 38 |  | Revisar Tasaciones | 20d | 2017-10-01 | 2017-10-20 | 25 |  | 83d |
| 39 |  | Publicaciones realizadas | 20d | 2017-10-01 | 2017-10-20 | 25 |  | 83d |
| 40 |  | Notificación de sujetos pasivos | 30d | 2017-10-01 | 2017-10-30 | 25 |  | 73d |
| 41 |  | Solicitar CRI | 20d | 2017-10-01 | 2017-10-20 | 25 |  | 30d |
| 42 |  | E3 | 0d | 2017-11-12 | 2017-11-12 | 41FF+23d |  | 30d |
| 43 |  | Informe final de notificación de pasivos | 10d | 2017-11-13 | 2017-11-22 | 42 |  | 30d |
| 44 |  | E4 | 0d | 2017-11-22 | 2017-11-22 | 43 |  | 50d |
| 45 |  | Proyectos de resolución en la Secretaria del MTC | 20d | 2017-11-23 | 2017-12-12 | 43 |  | 30d |
| 46 |  | E5 | 0d | 2017-12-12 | 2017-12-12 | 45 |  | 30d |
| 47 | 1.4 | **Cierre de Proyecto** | 0d | 2017-12-12 | 2017-12-12 | 15 |  | 30d |
| 48 |  | Entrega final de expedientes de servidumbre impresos | 0d | 2017-12-12 | 2017-12-12 |  |  | 30d |

## Version 2 (saved 2017-10-02, file 1_Provias Juanjui-Tocache_v0.mpp)

Note of the change: Serga

Last finish 2018-01-11 → 2018-02-10 (+30d). Complete tasks 6 → 17.

Added:

| ID | Task | Duration | Start | Finish | Predecessors |
| --- | --- | --- | --- | --- | --- |
| 29 | Revisión de antecedentes de campo | 2d | 2017-08-27 A | 2017-08-28 A | 18 |
| 40 | Solicitar a Provias disponibilidad presupuestal | 10d | 2017-10-21 | 2017-10-30 | 39, 38 |
| 45 | E6 | 0d | 2017-12-24 | 2017-12-24 | 44 |
| 47 | Elaboración del informe final del servicio | 3d | 2017-12-25 | 2017-12-27 |  |
| 48 | Informe de gestión proyecto | 2d | 2017-12-28 | 2017-12-29 | 47 |

Removed: 27 Elaboración de informe; 28 E2; 36 E1B Carta de DC de monto servicio de tasación/Informe de Rev. (de requerir).; 39 Publicaciones realizadas

Changed:

| ID | Task | Start | Finish | Duration | Complete | Total float | Predecessors | Other |
| --- | --- | --- | --- | --- | --- | --- | --- | --- |
| 1 | **ECCCAEI_ Juanji - Tocache (180** |  | 2018-01-11 → 2018-02-10 (+30d) | 150d → 180d | 9% → 34% |  |  | was named AGR_ Pangoa Cubantia |
| 2 | **Hitos** |  | 2018-01-11 → 2018-02-10 (+30d) | 150d → 180d |  |  |  |  |
| 4 | E:1 Cargo final de búsquedas catastrales | 2017-09-03 → 2017-09-13 A (+10d) | 2017-09-03 → 2017-09-13 A (+10d) |  | 0% → 100% | 130d → none | 3FS+20d → 3FS+30d | was named E:1A Cargo final de búsquedas catastrales, Cargo de carta Tasación |
| 5 | E:2 Cargo de carta Tasación, Honorario DC y Lev Observaciones | 2017-09-23 → 2017-09-28 (+5d) | 2017-09-23 → 2017-09-28 (+5d) |  |  | 110d → 135d | 3FS+40d → 3FS+45d | was named E:1B Honorario DC y Lev Observaciones |
| 6 | E:3 Informe final de BC y subsanaciones | 2017-10-13 → 2017-10-28 (+15d) | 2017-10-13 → 2017-10-28 (+15d) |  |  | 90d → 105d | 3FS+60d → 3FS+75d | was named E:2 Informe final de BC y subsanaciones |
| 7 | E:4 Rev, Tasaciones, Dsp. Presupuestal | 2017-11-12 → 2017-11-27 (+15d) | 2017-11-12 → 2017-11-27 (+15d) |  |  | 60d → 75d | 3FS+90d → 3FS+105d | was named E:3 Rev, Tasaciones, lev. Obs, publicaciones y noticaciones |
| 8 | E:5 Inf. Tec de sujetos pasivos y proyectos de Resol. | 2017-12-22 → 2018-01-21 (+30d) | 2017-12-22 → 2018-01-21 (+30d) |  |  |  | 3FS+130d → 3FS+160d | was named E:4 Inf. total de sujetos pasivos |
| 9 | E:6 Proyectos de Resol de Pago en el MTC | 2018-01-11 → 2018-02-10 (+30d) | 2018-01-11 → 2018-02-10 (+30d) |  |  |  | 3FS+150d → 3FS+180d | was named E:5 Proyectos de Resol de Pago en el MTC |
| 10 | **Inicio y Planificación** |  | 2017-08-21 A |  | 71% → 100% | 0d → none |  |  |
| 12 | Acta de Inicio | 2017-08-18 A | 2017-08-19 A |  | 0% → 100% | 2d → none |  |  |
| 14 | Aprobación del acta de inicio | 2017-08-21 A | 2017-08-21 A |  | 0% → 100% | 0d → none |  |  |
| 15 | **Ejecución - Seguimiento y Control** |  | 2017-12-12 → 2017-12-24 (+12d) | 113d → 125d | 8% → 33% | 30d → 43d |  |  |
| 16 | Revisión de plano guía del tramo en estudio (0/87) |  |  |  |  |  |  | was named Revisión de plano guía del tramo en estudio (0/73) |
| 17 | Revisión de antecedentes por predio (0/87) |  |  |  |  |  |  | was named Revisión de antecedentes por predio (0/73) |
| 18 | Planilla de seguimiento de predios (0/87) |  | 2017-08-25 A → 2017-08-26 A (+1d) | 1d → 2d |  |  |  | was named Planilla de seguimiento de predios (0/73) |
| 19 | **Búsqueda Catastral** | 2017-08-23 A → 2017-08-27 A (+4d) | 2017-10-13 → 2017-10-24 (+11d) | 52d → 59d | 11% → 47% | 90d → 104d | 3FS+8d → 18 |  |
| 20 | Plano y memoria para búsqueda catastral Est. SUNARP 0/87 | 2017-08-23 A → 2017-08-27 A (+4d) | 2017-08-31 → 2017-09-11 A (+11d) | 9d → 16d | 90% → 100% | 30d → none |  | was named Plano y memoria para búsqueda catastral Est. SUNARP 0/73 |
| 21 | E1 | 2017-09-03 → 2017-09-11 A (+8d) | 2017-09-03 → 2017-09-11 A (+8d) |  | 0% → 100% | 130d → none | 3FS+20d → 20 | was named E1A |
| 22 | Trámite de búsqueda catastral | 2017-09-01 → 2017-09-12 A (+11d) | 2017-09-20 → 2017-10-02 A (+12d) | 20d → 21d | 0% → 100% | 30d → none |  |  |
| 23 | Subsanación de observaciones | 2017-09-03 → 2017-09-19 (+16d) | 2017-09-20 → 2017-10-02 (+12d) | 18d → 14d |  | 30d → 104d |  |  |
| 24 | Obtención de búsquedas catastrales | 2017-09-21 → 2017-10-03 (+12d) | 2017-09-30 → 2017-10-12 (+12d) |  |  | 30d → 104d |  |  |
| 25 | Interpretación y análisis de búsquedas | 2017-09-26 → 2017-10-08 (+12d) | 2017-09-30 → 2017-10-17 (+17d) | 5d → 10d |  | 30d → 104d |  |  |
| 26 | Clasificación de certificados de búsqueda catastral | 2017-10-01 → 2017-10-18 (+17d) | 2017-10-03 → 2017-10-24 (+21d) | 3d → 7d |  | 90d → 104d |  |  |
| 27 | E3 | 2017-11-12 → 2017-10-24 (-19d) | 2017-11-12 → 2017-10-24 (-19d) |  |  | 30d → 104d | 39FF+23d → 26 |  |
| 28 | **Actualización de expedientes, (act. Inventario de activos)** | 2017-08-23 A → 2017-08-27 A (+4d) | 2017-09-23 → 2017-09-20 (-3d) | 32d → 25d | 17% → 78% | 110d → 43d | 3FS+8d → none |  |
| 30 | Notificación de visita | 2017-08-23 → 2017-08-29 A (+6d) | 2017-08-25 → 2017-08-31 A (+6d) |  | 0% → 100% | 2.8d → none | none → 29 |  |
| 31 | Recorrido de campo | 2017-08-26 A → 2017-09-01 A (+6d) | 2017-09-01 → 2017-09-10 A (+9d) | 7d → 10d | 40% → 100% | 132d → none |  |  |
| 32 | Identificación / propiedad / posesión de sujeto pasivo | 2017-08-26 A → 2017-09-01 A (+6d) | 2017-09-01 → 2017-09-10 A (+9d) | 7d → 10d | 40% → 100% | 132d → none |  |  |
| 33 | PP, MD | 2017-08-23 → 2017-09-11 A (+19d) | 2017-08-30 → 2017-09-20 A (+21d) | 8d → 10d | 0% → 100% | 134d → none | 20SS → 32 |  |
| 34 | Perjuicio económico | 2017-08-23 → 2017-09-11 (+19d) | 2017-08-30 → 2017-09-20 (+21d) | 8d → 10d |  | 134d → 43d | 20SS → 32 |  |
| 35 | E:2 Presentación a la DC | 2017-09-01 → 2017-09-20 (+19d) | 2017-09-01 → 2017-09-20 (+19d) |  |  | 132d → 43d | 31 → 34 | was named E1A Presentación de Exp. a la DC |
| 36 | **Gestión de trato directo** | 2017-10-01 → 2017-09-21 (-10d) | 2017-12-12 → 2017-12-24 (+12d) | 73d → 95d |  | 30d → 43d | none → 28 |  |
| 37 | Revisar Tasaciones | 2017-10-01 → 2017-09-21 (-10d) | 2017-10-20 → 2017-09-30 (-20d) | 20d → 10d |  | 83d → 63d | 25 → none |  |
| 38 | E4 | 2017-11-22 → 2017-09-30 (-53d) | 2017-11-22 → 2017-09-30 (-53d) |  |  | 50d → 63d | 42 → 37 |  |
| 39 | Solicitar CRI | 2017-10-01 → 2017-09-21 (-10d) |  | 20d → 30d |  | 30d → 43d | 25 → none |  |
| 41 | Notificación de sujetos pasivos | 2017-10-01 → 2017-10-31 (+30d) | 2017-10-30 → 2017-11-29 (+30d) |  |  | 73d → 43d | 25 → 40 |  |
| 42 | Informe final de notificación de pasivos | 2017-11-13 → 2017-11-30 (+17d) | 2017-11-22 → 2017-12-04 (+12d) | 10d → 5d |  | 30d → 43d | 27 → 41 |  |
| 43 | E5 | 2017-12-12 → 2017-12-04 (-8d) | 2017-12-12 → 2017-12-04 (-8d) |  |  | 30d → 63d | 44 → 42 |  |
| 44 | Proyectos de resolución en la Secretaria del MTC | 2017-11-23 → 2017-12-05 (+12d) | 2017-12-12 → 2017-12-24 (+12d) |  |  | 30d → 43d |  |  |
| 46 | **Cierre de Proyecto** | 2017-12-12 → 2017-12-25 (+13d) | 2017-12-12 → 2017-12-29 (+17d) | 0d → 5d |  | 30d → 43d |  |  |
| 49 | Entrega final de expedientes de servidumbre impresos | 2017-12-12 → 2017-12-29 (+17d) | 2017-12-12 → 2017-12-29 (+17d) |  |  | 30d → 43d | none → 48 |  |
