# 06_AAQSA - Cronograma_Negociación Activos AAQSA v3

How a schedule from MS Project changed from version to version. A marks actual dates.

## Version 1 (data date 2014-08-30, saved 2017-10-06, file 1_Predio Huampani_190917.mpp)

Note of the change: Serga

| ID | WBS | Task | Duration | Start | Finish | Predecessors | Complete | Total float | Constraint |
| --- | --- | --- | --- | --- | --- | --- | --- | --- | --- |
| 1 | 1 | **DIAGNOSTICO PREDIO HUAMPANI** | 15d? | 2017-09-18 A | 2017-10-03 |  | 18% | 0d |  |
| 2 |  | DIAGNOSTICO PREDIO HUAMPANI | 0d? | 2017-09-18 | 2017-09-18 |  |  | 0d | must start on 2017-09-18 |
| 3 |  | DIAGNOSTICO PREDIO HUAMPANI | 0d? | 2017-10-03 | 2017-10-03 |  |  | 0d | must finish on 2017-10-03 |
| 4 | 1.3 | **INICIO Y PLANIFICACIÓN** | 1d | 2017-09-18 A | 2017-09-18 A |  | 100% |  |  |
| 5 |  | Conformación de equipo de trabajo | 1d | 2017-09-18 A | 2017-09-18 A |  | 100% |  |  |
| 6 |  | Revisión de antecedentes | 1d | 2017-09-18 A | 2017-09-18 A |  | 100% |  |  |
| 7 | 1.4 | **EJECUCIÓN** | 13d | 2017-09-18 A | 2017-10-02 |  | 9% | 1d |  |
| 8 |  | Levantamiento Topográfico | 3d | 2017-09-18 A | 2017-09-21 | 4 | 50% | 11d |  |
| 9 |  | Recopilación de información SUNARP | 4d | 2017-09-20 | 2017-09-25 | 8SS+2d |  | 0d |  |
| 10 |  | Análisis de documentos recopilados | 5d | 2017-09-21 | 2017-09-26 | 9SS+1d |  | 0d |  |
| 11 |  | Consulta al ANA sobre pozos de agua | 1d | 2017-09-27 | 2017-09-27 | 10 |  | 0d |  |
| 12 |  | Elaboración de PPT | 2d | 2017-09-27 | 2017-09-29 | 11 |  | 0d | start no earlier than 2017-07-20 |
| 13 |  | Elaboración de informe | 2d | 2017-09-29 | 2017-10-02 | 12 |  | 0d |  |
| 14 | 1.5 | **CIERRE DEL PROYECTO** | 1d? | 2017-10-02 | 2017-10-03 |  |  | 0d |  |
| 15 |  | CIERRE DEL PROYECTO | 0d? | 2017-10-02 | 2017-10-02 |  |  | 0d | must start on 2017-10-02 |
| 16 |  | CIERRE DEL PROYECTO | 0d? | 2017-10-03 | 2017-10-03 |  |  | 0d | must finish on 2017-10-03 |
| 17 |  | Cierre del proyecto | 1d | 2017-10-02 | 2017-10-03 | 13 |  | 0d |  |

## Version 2 (data date 2014-08-30, saved 2017-10-06, file 2_Predio Huampani_220917.mpp)

Note of the change: Serga

Last finish stays 2017-10-03. Complete tasks 2 → 3.

Changed:

| ID | Task | Start | Finish | Complete | Total float |
| --- | --- | --- | --- | --- | --- |
| 1 | **DIAGNOSTICO PREDIO HUAMPANI** |  |  | 18% → 29% |  |
| 7 | **EJECUCIÓN** |  |  | 9% → 22% |  |
| 8 | Levantamiento Topográfico |  | 2017-09-21 A | 50% → 100% | 11d → none |
| 9 | Recopilación de información SUNARP | 2017-09-20 A |  | 0% → 20% | 0d → 8d |
