# Gantt_Trujillo-Chicama TC01_V2

How a schedule from MS Project changed from version to version. A marks actual dates.

## Version 1 (saved 2017-09-29, file _Gantt_Variante Trujillo_290917.mpp)

Note of the change: Serga

| ID | WBS | Task | Duration | Start | Finish | Predecessors | Complete | Total float | Constraint |
| --- | --- | --- | --- | --- | --- | --- | --- | --- | --- |
| 1 | 1 | **PROVIAS_AUTOPISTA EL SOL_TRAMO EVITAMIENTO TRUJILLO (Km 557+485 AL Km 562+30)** | 212d | 2017-09-21 A | 2018-04-20 |  | 7% | 0d |  |
| 2 | 1.1 | **Hitos.** | 212d | 2017-09-21 A | 2018-04-20 |  |  |  |  |
| 3 |  | Inicio del servicio | 0d | 2017-09-21 A | 2017-09-21 A |  | 100% |  | start no earlier than 2017-09-21 |
| 4 |  | Primer entregable | 0d | 2017-10-10 | 2017-10-10 |  |  | 193d | start no earlier than 2017-10-10 |
| 5 |  | Segundo entregable | 0d | 2017-11-20 | 2017-11-20 |  |  | 152d | start no earlier than 2017-11-20 |
| 6 |  | Tercer entregable | 0d | 2017-12-20 | 2017-12-20 |  |  | 122d | start no earlier than 2017-12-20 |
| 7 |  | Cuarto entregable | 0d | 2018-01-20 | 2018-01-20 |  |  | 91d | start no earlier than 2018-01-20 |
| 8 |  | Quinto entregable | 0d | 2018-02-20 | 2018-02-20 |  |  | 60d | start no earlier than 2018-02-20 |
| 9 |  | Sexto entregable | 0d | 2018-03-20 | 2018-03-20 |  |  | 32d | start no earlier than 2018-03-20 |
| 10 |  | Séptimo entregable | 0d | 2018-04-18 | 2018-04-18 |  |  | 3d | start no earlier than 2018-04-18 |
| 11 |  | Cierre del servicio | 0d | 2018-04-20 | 2018-04-20 |  |  | 1d | start no earlier than 2018-04-20 |
| 12 | 1.2 | **Inicio y Planificación** | 1d | 2017-09-21 A | 2017-09-21 A |  | 100% |  |  |
| 13 |  | Conformación de la brigada | 1d | 2017-09-21 A | 2017-09-21 A | 3 | 100% |  |  |
| 14 |  | Reunión de coordinación entre la brigada | 1d | 2017-09-21 A | 2017-09-21 A | 3 | 100% |  | start no earlier than 2017-09-19 |
| 15 |  | Plan de trabajo | 1d | 2017-09-21 A | 2017-09-21 A | 3 | 100% |  |  |
| 16 | 1.3 | **Ejecución** | 207d | 2017-09-22 A | 2018-04-16 |  | 6% | 4d |  |
| 17 | 1.3.1 | **Labores preliminares** | 1d | 2017-09-22 A | 2017-09-22 A |  | 100% |  |  |
| 18 |  | Revisión y análisis de información recibida | 1d | 2017-09-22 A | 2017-09-22 A | 15 | 100% |  |  |
| 19 |  | Coordinación especialista saneamiento de predios UGDV | 1d | 2017-09-22 A | 2017-09-22 A | 15 | 100% |  |  |
| 20 |  | Coordinación en IGN para certificación de puntos control | 1d | 2017-09-22 A | 2017-09-22 A | 15 | 100% |  |  |
| 21 |  | Almacenamiento de información en GPS | 1d | 2017-09-22 A | 2017-09-22 A | 15 | 100% |  |  |
| 22 | 1.3.2 | **Labores en campo** | 15d | 2017-09-23 A | 2017-10-07 |  | 45% | 195d |  |
| 23 |  | Movilización a la zona de trabajo | 1d | 2017-09-23 A | 2017-09-23 A | 21 | 100% |  |  |
| 24 |  | Instalación de los puntos de control (3 puntos) | 2d | 2017-09-24 A | 2017-09-25 | 23 | 50% | 1.5d |  |
| 25 |  | Recopilación de información predial en Trujillo | 2d | 2017-09-25 A | 2017-09-26 A | 24FS-1d | 100% |  |  |
| 26 |  | Plan de vuelo e instalación de puntos de control terrestre (Dianas) | 2d | 2017-09-25 A | 2017-09-26 A | 24FS-1d | 100% |  |  |
| 27 |  | Vuelo de Dron y Registro Aerofotográfico | 2d | 2017-09-26 A | 2017-09-27 A | 26FS-1d | 100% |  |  |
| 28 |  | Convocatoria a los titulares de los predios | 2d | 2017-09-25 A | 2017-09-26 | 24FS-1d | 75% | 2.5d |  |
| 29 |  | Linderación de predios | 10d | 2017-09-27 A | 2017-10-06 | 28 | 25% | 0d |  |
| 30 |  | Inventario de existencias | 10d | 2017-09-27 A | 2017-10-06 | 28 | 25% | 195d |  |
| 31 |  | Desmovilización | 1d | 2017-10-07 | 2017-10-07 | 30 |  | 195d |  |
| 32 | 1.3.3 | **Labores en gabinete (segundo entregable)** | 50d | 2017-09-27 A | 2017-11-15 |  | 4% | 156d |  |
| 33 |  | Plano de ubicación de puntos Geodésicos | 2d | 2017-09-27 | 2017-09-28 | 28 |  | 204d |  |
| 34 |  | Elaboración de modelos; base CAD, formatos planos | 2d | 2017-09-27 A | 2017-09-28 A | 28 | 100% |  |  |
| 35 |  | Elaboración del ortomosaico y digitalización de predios | 8d | 2017-10-01 | 2017-10-08 | 29FS-6d |  | 0d |  |
| 36 |  | Elaboración de planos y MD para Búsqueda Catastral | 16d | 2017-10-04 | 2017-10-19 | 35FS-5d |  | 0d |  |
| 37 |  | Informe del levantamiento físico | 5d | 2017-10-20 | 2017-10-24 | 36 |  | 178d |  |
| 38 |  | Informe de recopilación y procesamiento datos de campo | 5d | 2017-10-20 | 2017-10-24 | 36 |  | 178d |  |
| 39 |  | Gestión para la obtención de Certificado de Búsqueda Catastral | 2d | 2017-11-07 | 2017-11-08 | 36FS+18d |  | 0d |  |
| 40 |  | Elaboración de planos y MD para Anotaciones Preventivas | 7d | 2017-11-09 | 2017-11-15 | 39 |  | 153d |  |
| 41 |  | Conformación exp a SUNARP para obtener las Anotaciones Preventivas de Derecho de Vía | 7d | 2017-11-09 | 2017-11-15 | 39 |  | 136d |  |
| 42 | 1.3.4 | **Labores de seguimiento (tercer entregable)** | 47d | 2017-10-20 | 2017-12-05 |  |  | 25d |  |
| 43 |  | Elaboración de plano clave | 3d | 2017-11-16 | 2017-11-18 | 40 |  | 153d |  |
| 44 |  | Elaboración de plano de planta de los puntos de control | 3d | 2017-11-16 | 2017-11-18 | 40 |  | 153d |  |
| 45 |  | Elaboración de planos y MD para expediente de tasación | 13d | 2017-10-20 | 2017-11-01 | 36 |  | 165d |  |
| 46 |  | Elaboración de expedientes para tasación y remisión a Vivienda | 5d | 2017-11-02 | 2017-11-06 | 45 |  | 165d |  |
| 47 |  | Informe del análisis técnico legal de la búsqueda catastral | 10d | 2017-11-16 | 2017-11-25 | 41 |  | 146d |  |
| 48 |  | Inscripción de las Anotaciones Preventiva_1 | 10d | 2017-11-26 | 2017-12-05 | 41FS+10d |  | 136d |  |
| 49 |  | Clasificación de certificados de búsqueda catastral | 10d | 2017-11-14 | 2017-11-23 | 39FS+5d |  | 0d |  |
| 50 |  | Informe general Análisis Técnico Legal de todos los predios | 10d | 2017-11-24 | 2017-12-03 | 49 |  | 0d |  |
| 51 | 1.3.5 | **Labores de seguimiento (cuarto entregable)** | 75d | 2017-12-04 | 2018-02-16 |  |  | 0d |  |
| 52 |  | Publicaciones para posesionarios | 30d | 2017-12-04 | 2018-01-02 | 50 |  | 108d |  |
| 53 |  | Publicaciones para Sujeto Pasivo | 30d | 2017-12-04 | 2018-01-02 | 50 |  | 0d |  |
| 54 |  | Expedientes a SBN para transferencia de bienes del Estado | 10d | 2018-01-03 | 2018-01-12 | 53 |  | 0d |  |
| 55 |  | Oficios y Notificaciones; Sujeto Pasivo, ocupantes y poseedor | 5d | 2018-01-13 | 2018-01-17 | 54 |  | 0d |  |
| 56 |  | Inscripción de las Anotaciones Preventiva_2 | 10d | 2018-01-18 | 2018-01-27 | 55 |  | 0d |  |
| 57 |  | Plan de saneamiento; transferencia Interestatal | 10d | 2018-01-28 | 2018-02-06 | 56 |  | 0d |  |
| 58 |  | Solicitud de devolución de exp de tasación y remisión PROVIAS | 10d | 2018-02-07 | 2018-02-16 | 57 |  | 0d |  |
| 59 | 1.3.6 | **Labores de seguimiento (quinto, sexto y séptimo entregable)** | 59d | 2018-02-17 | 2018-04-16 |  |  | 0d |  |
| 60 |  | Informe del quinto entregable | 10d | 2018-02-17 | 2018-02-26 | 58 |  | 0d |  |
| 61 |  | Elaboración de expe de independización o inmatriculación | 10d | 2018-02-27 | 2018-03-08 | 60 |  | 0d |  |
| 62 |  | Informe de sexto entregable | 10d | 2018-03-09 | 2018-03-18 | 61 |  | 0d |  |
| 63 |  | Gestión de RM, RD, Formularios Registrales y contratos | 10d | 2018-03-19 | 2018-03-28 | 62 |  | 0d |  |
| 64 |  | Gestión de inscripción en SUNARP | 10d | 2018-03-29 | 2018-04-07 | 63 |  | 0d |  |
| 65 |  | Informe Final | 9d | 2018-04-08 | 2018-04-16 | 64 |  | 0d |  |
| 66 | 1.4 | **Cierre de Proyecto** | 4d | 2018-04-17 | 2018-04-20 |  |  | 0d |  |
| 67 |  | Control de calidad | 1d | 2018-04-17 | 2018-04-17 | 65 |  | 0d |  |
| 68 |  | Entrega al cliente | 1d | 2018-04-18 | 2018-04-18 | 67 |  | 2d |  |
| 69 |  | Cierre de Proyecto | 2d | 2018-04-19 | 2018-04-20 | 67FS+1d |  | 0d |  |

## Version 2 (saved 2017-10-13, file v1_Gantt_Trujillo-Chicama_TC01_131017.mpp)

Note of the change: Serga

Last finish 2018-04-20 → 2018-05-04 (+14d). Complete tasks 13 → 14.

Changed:

| ID | Task | Start | Finish | Duration | Complete | Total float | Other |
| --- | --- | --- | --- | --- | --- | --- | --- |
| 1 | **PROVIAS_AUTOPISTA EL SOL_TRAMO TRUJILLO - CHICAMA (km 586+588 AL km 604+027)** | 2017-09-21 A → 2017-10-03 A (+12d) | 2018-04-20 → 2018-05-04 (+14d) | 212d → 214d | 7% → 9% | 0d → none | was named PROVIAS_AUTOPISTA EL SOL_TRAMO EVITAMIENTO TRUJILLO (Km 557+485 AL Km 562+30); baseline start 2017-09-21 → 2017-10-03; baseline finish 2018-04-20 → 2018-05-04 |
| 2 | **Hitos.** | 2017-09-21 A → 2017-10-03 (+12d) | 2018-04-20 → 2018-05-04 (+14d) | 212d → 214d |  |  | baseline start 2017-09-21 → 2017-10-03; baseline finish 2018-04-20 → 2018-05-02 |
| 3 | Inicio del servicio | 2017-09-21 A → 2017-10-03 (+12d) | 2017-09-21 A → 2017-10-03 (+12d) |  | 100% → 0% | none → 214d | constraint start no earlier than 2017-09-21 → start no earlier than 2017-10-03; baseline start 2017-09-21 → 2017-10-03; baseline finish 2017-09-21 → 2017-10-03 |
| 4 | Primer entregable | 2017-10-10 → 2017-10-20 (+10d) | 2017-10-10 → 2017-10-20 (+10d) |  |  | 193d → 197d | constraint start no earlier than 2017-10-10 → start no earlier than 2017-10-20; baseline start 2017-10-10 → 2017-10-20; baseline finish 2017-10-10 → 2017-10-20 |
| 5 | Segundo entregable | 2017-11-20 → 2017-12-01 (+11d) | 2017-11-20 → 2017-12-01 (+11d) |  |  | 152d → 155d | constraint start no earlier than 2017-11-20 → start no earlier than 2017-12-01; baseline start 2017-11-20 → 2017-12-01; baseline finish 2017-11-20 → 2017-12-01 |
| 6 | Tercer entregable | 2017-12-20 → 2017-12-29 (+9d) | 2017-12-20 → 2017-12-29 (+9d) |  |  | 122d → 127d | constraint start no earlier than 2017-12-20 → start no earlier than 2017-12-29; baseline start 2017-12-20 → 2017-12-29; baseline finish 2017-12-20 → 2017-12-29 |
| 7 | Cuarto entregable | 2018-01-20 → 2018-01-30 (+10d) | 2018-01-20 → 2018-01-30 (+10d) |  |  | 91d → 95d | constraint start no earlier than 2018-01-20 → start no earlier than 2018-01-30; baseline start 2018-01-20 → 2018-01-30; baseline finish 2018-01-20 → 2018-01-30 |
| 8 | Quinto entregable | 2018-02-20 → 2018-03-01 (+9d) | 2018-02-20 → 2018-03-01 (+9d) |  |  | 60d → 65d | constraint start no earlier than 2018-02-20 → start no earlier than 2018-03-01; baseline start 2018-02-20 → 2018-03-01; baseline finish 2018-02-20 → 2018-03-01 |
| 9 | Sexto entregable | 2018-03-20 → 2018-03-30 (+10d) | 2018-03-20 → 2018-03-30 (+10d) |  |  | 32d → 36d | constraint start no earlier than 2018-03-20 → start no earlier than 2018-03-30; baseline start 2018-03-20 → 2018-03-30; baseline finish 2018-03-20 → 2018-03-30 |
| 10 | Séptimo entregable | 2018-04-18 → 2018-04-30 (+12d) | 2018-04-18 → 2018-04-30 (+12d) |  |  | 3d → 5d | constraint start no earlier than 2018-04-18 → start no earlier than 2018-04-30; baseline start 2018-04-18 → 2018-04-30; baseline finish 2018-04-18 → 2018-04-30 |
| 11 | Cierre del servicio | 2018-04-20 → 2018-05-04 (+14d) | 2018-04-20 → 2018-05-04 (+14d) |  |  |  | constraint start no earlier than 2018-04-20 → start no earlier than 2018-05-04; baseline start 2018-04-20 → 2018-05-04; baseline finish 2018-04-20 → 2018-05-04 |
| 12 | **Inicio y Planificación** | 2017-09-21 A → 2017-10-03 A (+12d) | 2017-09-21 A → 2017-10-03 A (+12d) |  |  |  | baseline start 2017-09-21 → 2017-10-03; baseline finish 2017-09-21 → 2017-10-03 |
| 13 | Conformación de la brigada | 2017-09-21 A → 2017-10-03 A (+12d) | 2017-09-21 A → 2017-10-03 A (+12d) |  |  |  | baseline start 2017-09-21 → 2017-10-03; baseline finish 2017-09-21 → 2017-10-03 |
| 14 | Reunión de coordinación entre la brigada | 2017-09-21 A → 2017-10-03 A (+12d) | 2017-09-21 A → 2017-10-03 A (+12d) |  |  |  | baseline start 2017-09-21 → 2017-10-03; baseline finish 2017-09-21 → 2017-10-03 |
| 15 | Plan de trabajo | 2017-09-21 A → 2017-10-03 A (+12d) | 2017-09-21 A → 2017-10-03 A (+12d) |  |  |  | baseline start 2017-09-21 → 2017-10-03; baseline finish 2017-09-21 → 2017-10-03 |
| 16 | **Ejecución** | 2017-09-22 A → 2017-10-04 A (+12d) | 2018-04-16 → 2018-04-28 (+12d) |  | 6% → 9% | 4d → 6d | baseline start 2017-09-22 → 2017-10-04; baseline finish 2018-04-16 → 2018-04-28 |
| 17 | **Labores preliminares** | 2017-09-22 A → 2017-10-04 A (+12d) | 2017-09-22 A → 2017-10-04 A (+12d) |  |  |  | baseline start 2017-09-22 → 2017-10-04; baseline finish 2017-09-22 → 2017-10-04 |
| 18 | Revisión y análisis de información recibida | 2017-09-22 A → 2017-10-04 A (+12d) | 2017-09-22 A → 2017-10-04 A (+12d) |  |  |  | baseline start 2017-09-22 → 2017-10-04; baseline finish 2017-09-22 → 2017-10-04 |
| 19 | Coordinación especialista saneamiento de predios UGDV | 2017-09-22 A → 2017-10-04 A (+12d) | 2017-09-22 A → 2017-10-04 A (+12d) |  |  |  | baseline start 2017-09-22 → 2017-10-04; baseline finish 2017-09-22 → 2017-10-04 |
| 20 | Coordinación en IGN para certificación de puntos control | 2017-09-22 A → 2017-10-04 A (+12d) | 2017-09-22 A → 2017-10-04 A (+12d) |  |  |  | baseline start 2017-09-22 → 2017-10-04; baseline finish 2017-09-22 → 2017-10-04 |
| 21 | Almacenamiento de información en GPS | 2017-09-22 A → 2017-10-04 A (+12d) | 2017-09-22 A → 2017-10-04 A (+12d) |  |  |  | baseline start 2017-09-22 → 2017-10-04; baseline finish 2017-09-22 → 2017-10-04 |
| 22 | **Labores en campo** | 2017-09-23 A → 2017-10-05 A (+12d) | 2017-10-07 → 2017-10-19 (+12d) |  | 45% → 66% | 195d → 197d | baseline start 2017-09-23 → 2017-10-05; baseline finish 2017-10-07 → 2017-10-19 |
| 23 | Movilización a la zona de trabajo | 2017-09-23 A → 2017-10-05 A (+12d) | 2017-09-23 A → 2017-10-05 A (+12d) |  |  |  | baseline start 2017-09-23 → 2017-10-05; baseline finish 2017-09-23 → 2017-10-05 |
| 24 | Instalación de los puntos de control (7 puntos) | 2017-09-24 A → 2017-10-06 A (+12d) | 2017-09-25 → 2017-10-07 A (+12d) |  | 50% → 100% | 1.5d → none | was named Instalación de los puntos de control (3 puntos); baseline start 2017-09-24 → 2017-10-06; baseline finish 2017-09-25 → 2017-10-07 |
| 25 | Recopilación de información predial en Trujillo | 2017-09-25 A → 2017-10-07 A (+12d) | 2017-09-26 A → 2017-10-08 A (+12d) |  |  |  | baseline start 2017-09-25 → 2017-10-07; baseline finish 2017-09-26 → 2017-10-08 |
| 26 | Plan de vuelo e instalación de puntos de control terrestre (Dianas) | 2017-09-25 A → 2017-10-07 A (+12d) | 2017-09-26 A → 2017-10-08 A (+12d) |  |  |  | baseline start 2017-09-25 → 2017-10-07; baseline finish 2017-09-26 → 2017-10-08 |
| 27 | Vuelo de Dron y Registro Aerofotográfico | 2017-09-26 A → 2017-10-08 A (+12d) | 2017-09-27 A → 2017-10-09 A (+12d) |  |  |  | baseline start 2017-09-26 → 2017-10-08; baseline finish 2017-09-27 → 2017-10-09 |
| 28 | Convocatoria a los titulares de los predios | 2017-09-25 A → 2017-10-07 A (+12d) | 2017-09-26 → 2017-10-08 A (+12d) |  | 75% → 100% | 2.5d → none | baseline start 2017-09-25 → 2017-10-07; baseline finish 2017-09-26 → 2017-10-08 |
| 29 | Linderación de predios | 2017-09-27 A → 2017-10-09 A (+12d) | 2017-10-06 → 2017-10-18 (+12d) |  | 25% → 50% |  | baseline start 2017-09-27 → 2017-10-09; baseline finish 2017-10-06 → 2017-10-18 |
| 30 | Inventario de existencias | 2017-09-27 A → 2017-10-09 A (+12d) | 2017-10-06 → 2017-10-18 (+12d) |  | 25% → 50% | 195d → 197d | baseline start 2017-09-27 → 2017-10-09; baseline finish 2017-10-06 → 2017-10-18 |
| 31 | Desmovilización | 2017-10-07 → 2017-10-19 (+12d) | 2017-10-07 → 2017-10-19 (+12d) |  |  | 195d → 197d | baseline start 2017-10-07 → 2017-10-19; baseline finish 2017-10-07 → 2017-10-19 |
| 32 | **Labores en gabinete (segundo entregable)** | 2017-09-27 A → 2017-10-09 A (+12d) | 2017-11-15 → 2017-11-27 (+12d) |  |  | 156d → 158d | baseline start 2017-09-27 → 2017-10-09; baseline finish 2017-11-15 → 2017-11-27 |
| 33 | Plano de ubicación de puntos Geodésicos | 2017-09-27 → 2017-10-09 A (+12d) | 2017-09-28 → 2017-10-10 (+12d) |  | 0% → 20% | 204d → 206d | baseline start 2017-09-27 → 2017-10-09; baseline finish 2017-09-28 → 2017-10-10 |
| 34 | Elaboración de modelos; base CAD, formatos planos | 2017-09-27 A → 2017-10-09 A (+12d) | 2017-09-28 A → 2017-10-10 A (+12d) |  |  |  | baseline start 2017-09-27 → 2017-10-09; baseline finish 2017-09-28 → 2017-10-10 |
| 35 | Elaboración del ortomosaico y digitalización de predios | 2017-10-01 → 2017-10-13 (+12d) | 2017-10-08 → 2017-10-20 (+12d) |  |  |  | baseline start 2017-10-01 → 2017-10-13; baseline finish 2017-10-08 → 2017-10-20 |
| 36 | Elaboración de planos y MD para Búsqueda Catastral | 2017-10-04 → 2017-10-16 (+12d) | 2017-10-19 → 2017-10-31 (+12d) |  |  |  | baseline start 2017-10-04 → 2017-10-16; baseline finish 2017-10-19 → 2017-10-31 |
| 37 | Informe del levantamiento físico | 2017-10-20 → 2017-11-01 (+12d) | 2017-10-24 → 2017-11-05 (+12d) |  |  | 178d → 180d | baseline start 2017-10-20 → 2017-11-01; baseline finish 2017-10-24 → 2017-11-05 |
| 38 | Informe de recopilación y procesamiento datos de campo | 2017-10-20 → 2017-11-01 (+12d) | 2017-10-24 → 2017-11-05 (+12d) |  |  | 178d → 180d | baseline start 2017-10-20 → 2017-11-01; baseline finish 2017-10-24 → 2017-11-05 |
| 39 | Gestión para la obtención de Certificado de Búsqueda Catastral | 2017-11-07 → 2017-11-19 (+12d) | 2017-11-08 → 2017-11-20 (+12d) |  |  |  | baseline start 2017-11-07 → 2017-11-19; baseline finish 2017-11-08 → 2017-11-20 |
| 40 | Elaboración de planos y MD para Anotaciones Preventivas | 2017-11-09 → 2017-11-21 (+12d) | 2017-11-15 → 2017-11-27 (+12d) |  |  | 153d → 155d | baseline start 2017-11-09 → 2017-11-21; baseline finish 2017-11-15 → 2017-11-27 |
| 41 | Conformación exp a SUNARP para obtener las Anotaciones Preventivas de Derecho de Vía | 2017-11-09 → 2017-11-21 (+12d) | 2017-11-15 → 2017-11-27 (+12d) |  |  | 136d → 138d | baseline start 2017-11-09 → 2017-11-21; baseline finish 2017-11-15 → 2017-11-27 |
| 42 | **Labores de seguimiento (tercer entregable)** | 2017-10-20 → 2017-11-01 (+12d) | 2017-12-05 → 2017-12-17 (+12d) |  |  |  | baseline start 2017-10-20 → 2017-11-01; baseline finish 2017-12-05 → 2017-12-17 |
| 43 | Elaboración de plano clave | 2017-11-16 → 2017-11-28 (+12d) | 2017-11-18 → 2017-11-30 (+12d) |  |  | 153d → 155d | baseline start 2017-11-16 → 2017-11-28; baseline finish 2017-11-18 → 2017-11-30 |
| 44 | Elaboración de plano de planta de los puntos de control | 2017-11-16 → 2017-11-28 (+12d) | 2017-11-18 → 2017-11-30 (+12d) |  |  | 153d → 155d | baseline start 2017-11-16 → 2017-11-28; baseline finish 2017-11-18 → 2017-11-30 |
| 45 | Elaboración de planos y MD para expediente de tasación | 2017-10-20 → 2017-11-01 (+12d) | 2017-11-01 → 2017-11-13 (+12d) |  |  | 165d → 167d | baseline start 2017-10-20 → 2017-11-01; baseline finish 2017-11-01 → 2017-11-13 |
| 46 | Elaboración de expedientes para tasación y remisión a Vivienda | 2017-11-02 → 2017-11-14 (+12d) | 2017-11-06 → 2017-11-18 (+12d) |  |  | 165d → 167d | baseline start 2017-11-02 → 2017-11-14; baseline finish 2017-11-06 → 2017-11-18 |
| 47 | Informe del análisis técnico legal de la búsqueda catastral | 2017-11-16 → 2017-11-28 (+12d) | 2017-11-25 → 2017-12-07 (+12d) |  |  | 146d → 148d | baseline start 2017-11-16 → 2017-11-28; baseline finish 2017-11-25 → 2017-12-07 |
| 48 | Inscripción de las Anotaciones Preventiva_1 | 2017-11-26 → 2017-12-08 (+12d) | 2017-12-05 → 2017-12-17 (+12d) |  |  | 136d → 138d | baseline start 2017-11-26 → 2017-12-08; baseline finish 2017-12-05 → 2017-12-17 |
| 49 | Clasificación de certificados de búsqueda catastral | 2017-11-14 → 2017-11-26 (+12d) | 2017-11-23 → 2017-12-05 (+12d) |  |  |  | baseline start 2017-11-14 → 2017-11-26; baseline finish 2017-11-23 → 2017-12-05 |
| 50 | Informe general Análisis Técnico Legal de todos los predios | 2017-11-24 → 2017-12-06 (+12d) | 2017-12-03 → 2017-12-15 (+12d) |  |  |  | baseline start 2017-11-24 → 2017-12-06; baseline finish 2017-12-03 → 2017-12-15 |
| 51 | **Labores de seguimiento (cuarto entregable)** | 2017-12-04 → 2017-12-16 (+12d) | 2018-02-16 → 2018-02-28 (+12d) |  |  |  | baseline start 2017-12-04 → 2017-12-16; baseline finish 2018-02-16 → 2018-02-28 |
| 52 | Publicaciones para posesionarios | 2017-12-04 → 2017-12-16 (+12d) | 2018-01-02 → 2018-01-14 (+12d) |  |  | 108d → 110d | baseline start 2017-12-04 → 2017-12-16; baseline finish 2018-01-02 → 2018-01-14 |
| 53 | Publicaciones para Sujeto Pasivo | 2017-12-04 → 2017-12-16 (+12d) | 2018-01-02 → 2018-01-14 (+12d) |  |  |  | baseline start 2017-12-04 → 2017-12-16; baseline finish 2018-01-02 → 2018-01-14 |
| 54 | Expedientes a SBN para transferencia de bienes del Estado | 2018-01-03 → 2018-01-15 (+12d) | 2018-01-12 → 2018-01-24 (+12d) |  |  |  | baseline start 2018-01-03 → 2018-01-15; baseline finish 2018-01-12 → 2018-01-24 |
| 55 | Oficios y Notificaciones; Sujeto Pasivo, ocupantes y poseedor | 2018-01-13 → 2018-01-25 (+12d) | 2018-01-17 → 2018-01-29 (+12d) |  |  |  | baseline start 2018-01-13 → 2018-01-25; baseline finish 2018-01-17 → 2018-01-29 |
| 56 | Inscripción de las Anotaciones Preventiva_2 | 2018-01-18 → 2018-01-30 (+12d) | 2018-01-27 → 2018-02-08 (+12d) |  |  |  | baseline start 2018-01-18 → 2018-01-30; baseline finish 2018-01-27 → 2018-02-08 |
| 57 | Plan de saneamiento; transferencia Interestatal | 2018-01-28 → 2018-02-09 (+12d) | 2018-02-06 → 2018-02-18 (+12d) |  |  |  | baseline start 2018-01-28 → 2018-02-09; baseline finish 2018-02-06 → 2018-02-18 |
| 58 | Solicitud de devolución de exp de tasación y remisión PROVIAS | 2018-02-07 → 2018-02-19 (+12d) | 2018-02-16 → 2018-02-28 (+12d) |  |  |  | baseline start 2018-02-07 → 2018-02-19; baseline finish 2018-02-16 → 2018-02-28 |
| 59 | **Labores de seguimiento (quinto, sexto y séptimo entregable)** | 2018-02-17 → 2018-03-01 (+12d) | 2018-04-16 → 2018-04-28 (+12d) |  |  |  | baseline start 2018-02-17 → 2018-03-01; baseline finish 2018-04-16 → 2018-04-28 |
| 60 | Informe del quinto entregable | 2018-02-17 → 2018-03-01 (+12d) | 2018-02-26 → 2018-03-10 (+12d) |  |  |  | baseline start 2018-02-17 → 2018-03-01; baseline finish 2018-02-26 → 2018-03-10 |
| 61 | Elaboración de expe de independización o inmatriculación | 2018-02-27 → 2018-03-11 (+12d) | 2018-03-08 → 2018-03-20 (+12d) |  |  |  | baseline start 2018-02-27 → 2018-03-11; baseline finish 2018-03-08 → 2018-03-20 |
| 62 | Informe de sexto entregable | 2018-03-09 → 2018-03-21 (+12d) | 2018-03-18 → 2018-03-30 (+12d) |  |  |  | baseline start 2018-03-09 → 2018-03-21; baseline finish 2018-03-18 → 2018-03-30 |
| 63 | Gestión de RM, RD, Formularios Registrales y contratos | 2018-03-19 → 2018-03-31 (+12d) | 2018-03-28 → 2018-04-09 (+12d) |  |  |  | baseline start 2018-03-19 → 2018-03-31; baseline finish 2018-03-28 → 2018-04-09 |
| 64 | Gestión de inscripción en SUNARP | 2018-03-29 → 2018-04-10 (+12d) | 2018-04-07 → 2018-04-19 (+12d) |  |  |  | baseline start 2018-03-29 → 2018-04-10; baseline finish 2018-04-07 → 2018-04-19 |
| 65 | Informe Final | 2018-04-08 → 2018-04-20 (+12d) | 2018-04-16 → 2018-04-28 (+12d) |  |  |  | baseline start 2018-04-08 → 2018-04-20; baseline finish 2018-04-16 → 2018-04-28 |
| 66 | **Cierre de Proyecto** | 2018-04-17 → 2018-04-29 (+12d) | 2018-04-20 → 2018-05-04 (+14d) | 4d → 6d |  |  | baseline start 2018-04-17 → 2018-04-29; baseline finish 2018-04-20 → 2018-05-04 |
| 67 | Control de calidad | 2018-04-17 → 2018-04-29 (+12d) | 2018-04-17 → 2018-04-29 (+12d) |  |  |  | baseline start 2018-04-17 → 2018-04-29; baseline finish 2018-04-17 → 2018-04-29 |
| 68 | Entrega al cliente | 2018-04-18 → 2018-04-30 (+12d) | 2018-04-18 → 2018-04-30 (+12d) |  |  | 2d → 4d | baseline start 2018-04-18 → 2018-04-30; baseline finish 2018-04-18 → 2018-04-30 |
| 69 | Cierre de Proyecto | 2018-04-19 → 2018-05-01 (+12d) | 2018-04-20 → 2018-05-04 (+14d) | 2d → 4d |  |  | baseline start 2018-04-19 → 2018-05-01; baseline finish 2018-04-20 → 2018-05-04 |

## Version 3 (saved 2017-12-11, file _Gantt_Trujillo-Chicama.mpp)

Note of the change: Serga

Last finish stays 2018-05-04. Complete tasks 14 → 26.

Changed:

| ID | Task | Start | Finish | Complete | Total float |
| --- | --- | --- | --- | --- | --- |
| 1 | **PROVIAS_AUTOPISTA EL SOL_TRAMO TRUJILLO - CHICAMA (km 586+588 AL km 604+027)** |  |  | 9% → 33% |  |
| 16 | **Ejecución** |  |  | 9% → 33% |  |
| 22 | **Labores en campo** |  | 2017-10-19 A | 66% → 100% | 197d → none |
| 29 | Linderación de predios |  | 2017-10-18 A | 50% → 100% | 0d → none |
| 30 | Inventario de existencias |  | 2017-10-18 A | 50% → 100% | 197d → none |
| 31 | Desmovilización | 2017-10-19 A | 2017-10-19 A | 0% → 100% | 197d → none |
| 32 | **Labores en gabinete (segundo entregable)** |  |  | 4% → 97% | 158d → 0d |
| 33 | Plano de ubicación de puntos Geodésicos |  | 2017-10-10 A | 20% → 100% | 206d → none |
| 35 | Elaboración del ortomosaico y digitalización de predios | 2017-10-13 A | 2017-10-20 A | 0% → 100% | 0d → none |
| 36 | Elaboración de planos y MD para Búsqueda Catastral | 2017-10-16 A | 2017-10-31 A | 0% → 100% | 0d → none |
| 37 | Informe del levantamiento físico | 2017-11-01 A | 2017-11-05 A | 0% → 100% | 180d → none |
| 38 | Informe de recopilación y procesamiento datos de campo | 2017-11-01 A | 2017-11-05 A | 0% → 100% | 180d → none |
| 39 | Gestión para la obtención de Certificado de Búsqueda Catastral | 2017-11-19 A |  | 0% → 20% |  |
| 40 | Elaboración de planos y MD para Anotaciones Preventivas | 2017-11-21 A | 2017-11-27 A | 0% → 100% | 155d → none |
| 41 | Conformación exp a SUNARP para obtener las Anotaciones Preventivas de Derecho de Vía | 2017-11-21 A | 2017-11-27 A | 0% → 100% | 138d → none |
| 42 | **Labores de seguimiento (tercer entregable)** | 2017-11-01 A |  | 0% → 23% | 25d → 138d |
| 43 | Elaboración de plano clave | 2017-11-28 A | 2017-11-30 A | 0% → 100% | 155d → none |
| 44 | Elaboración de plano de planta de los puntos de control | 2017-11-28 A | 2017-11-30 A | 0% → 100% | 155d → none |
| 45 | Elaboración de planos y MD para expediente de tasación | 2017-11-01 A |  | 0% → 50% | 167d → 2.5d |
| 46 | Elaboración de expedientes para tasación y remisión a Vivienda | 2017-11-14 A |  | 0% → 50% |  |

## Version 4 (saved 2017-12-16, file _03 Gantt_Guadalupe-San JosÇ del Moro.mpp)

Note of the change: Serga

Last finish 2018-05-04 → 2018-07-13 (+70d). Complete tasks 26 → 8.

Added:

| ID | Task | Duration | Start | Finish | Predecessors |
| --- | --- | --- | --- | --- | --- |
| 24 | Reconocimiento de la zona de trabajo | 1d | 2017-12-17 | 2017-12-17 | 23 |
| 28 | Procesamiento de información | 3d | 2017-12-24 | 2017-12-26 | 27 |
| 30 | Movilización a la zona de trabajo | 1d | 2017-12-27 | 2017-12-27 | 28 |
| 35 | Presentación a SUNARP de búsqueda catastral | 1d | 2018-01-15 | 2018-01-15 | 34 |
| 39 | Informe de actividades | 3d | 2018-01-30 | 2018-02-01 | 37 |
| 41 | Entrega del segundo entregable | 1d | 2018-02-02 | 2018-02-02 | 39 |

Removed: 26 Plan de vuelo e instalación de puntos de control terrestre (Dianas); 27 Vuelo de Dron y Registro Aerofotográfico; 33 Plano de ubicación de puntos Geodésicos; 34 Elaboración de modelos; base CAD, formatos planos; 35 Elaboración del ortomosaico y digitalización de predios; 38 Informe de recopilación y procesamiento datos de campo

Changed:

| ID | Task | Start | Finish | Duration | Complete | Total float | Predecessors | Other |
| --- | --- | --- | --- | --- | --- | --- | --- | --- |
| 1 | **PROVIAS_AUTOPISTA DEL SOL_GUADALUPE - SAN JOSE DEL MORO (km 701+804 AL km 709+531)** | 2017-10-03 A → 2017-12-07 A (+65d) | 2018-05-04 → 2018-07-13 (+70d) | 214d → 219d | 33% → 3% | none → 0d |  | was named PROVIAS_AUTOPISTA EL SOL_TRAMO TRUJILLO - CHICAMA (km 586+588 AL km 604+027); baseline start 2017-10-03 → 2017-12-07; baseline finish 2018-05-04 → 2018-07-13 |
| 2 | **Hitos.** | 2017-10-03 → 2017-12-07 A (+65d) | 2018-05-04 → 2018-07-13 (+70d) | 214d → 218d |  | none → 1d |  | baseline start 2017-10-03 → 2017-12-07; baseline finish 2018-05-02 → 2018-07-13 |
| 3 | Inicio del servicio | 2017-10-03 → 2017-12-07 A (+65d) | 2017-10-03 → 2017-12-07 A (+65d) |  | 0% → 100% | 214d → none |  | constraint start no earlier than 2017-10-03 → start no earlier than 2017-12-07; baseline start 2017-10-03 → 2017-12-07; baseline finish 2017-10-03 → 2017-12-07 |
| 4 | Primer entregable | 2017-10-20 → 2017-12-26 (+67d) | 2017-10-20 → 2017-12-26 (+67d) |  |  | 197d → 200d |  | constraint start no earlier than 2017-10-20 → start no earlier than 2017-12-26; baseline start 2017-10-20 → 2017-12-26; baseline finish 2017-10-20 → 2017-12-26 |
| 5 | Segundo entregable | 2017-12-01 → 2018-02-02 (+63d) | 2017-12-01 → 2018-02-02 (+63d) |  |  | 155d → 162d |  | constraint start no earlier than 2017-12-01 → start no earlier than 2018-02-02; baseline start 2017-12-01 → 2018-02-02; baseline finish 2017-12-01 → 2018-02-02 |
| 6 | Tercer entregable | 2017-12-29 → 2018-03-06 (+67d) | 2017-12-29 → 2018-03-06 (+67d) |  |  | 127d → 130d |  | constraint start no earlier than 2017-12-29 → start no earlier than 2018-03-06; baseline start 2017-12-29 → 2018-03-06; baseline finish 2017-12-29 → 2018-03-06 |
| 7 | Cuarto entregable | 2018-01-30 → 2018-04-05 (+65d) | 2018-01-30 → 2018-04-05 (+65d) |  |  | 95d → 100d |  | constraint start no earlier than 2018-01-30 → start no earlier than 2018-04-05; baseline start 2018-01-30 → 2018-04-05; baseline finish 2018-01-30 → 2018-04-05 |
| 8 | Quinto entregable | 2018-03-01 → 2018-05-04 (+64d) | 2018-03-01 → 2018-05-04 (+64d) |  |  | 65d → 71d |  | constraint start no earlier than 2018-03-01 → start no earlier than 2018-05-04; baseline start 2018-03-01 → 2018-05-04; baseline finish 2018-03-01 → 2018-05-04 |
| 9 | Sexto entregable | 2018-03-30 → 2018-06-04 (+66d) | 2018-03-30 → 2018-06-04 (+66d) |  |  | 36d → 40d |  | constraint start no earlier than 2018-03-30 → start no earlier than 2018-06-04; baseline start 2018-03-30 → 2018-06-04; baseline finish 2018-03-30 → 2018-06-04 |
| 10 | Séptimo entregable | 2018-04-30 → 2018-07-04 (+65d) | 2018-04-30 → 2018-07-04 (+65d) |  |  | 5d → 10d |  | constraint start no earlier than 2018-04-30 → start no earlier than 2018-07-04; baseline start 2018-04-30 → 2018-07-04; baseline finish 2018-04-30 → 2018-07-04 |
| 11 | Cierre del servicio | 2018-05-04 → 2018-07-13 (+70d) | 2018-05-04 → 2018-07-13 (+70d) |  |  |  |  | constraint start no earlier than 2018-05-04 → start no earlier than 2018-07-13; baseline start 2018-05-04 → 2018-07-13; baseline finish 2018-05-04 → 2018-07-13 |
| 12 | **Inicio y Planificación** | 2017-10-03 A → 2017-12-07 A (+65d) | 2017-10-03 A → 2017-12-10 A (+68d) | 1d → 4d |  |  |  | baseline start 2017-10-03 → 2017-12-07; baseline finish 2017-10-03 → 2017-12-10 |
| 13 | Conformación de la brigada | 2017-10-03 A → 2017-12-07 A (+65d) | 2017-10-03 A → 2017-12-07 A (+65d) |  |  |  |  | baseline start 2017-10-03 → 2017-12-07; baseline finish 2017-10-03 → 2017-12-07 |
| 14 | Reunión de coordinación entre la brigada | 2017-10-03 A → 2017-12-07 A (+65d) | 2017-10-03 A → 2017-12-07 A (+65d) |  |  |  |  | baseline start 2017-10-03 → 2017-12-07; baseline finish 2017-10-03 → 2017-12-07 |
| 15 | Plan de trabajo | 2017-10-03 A → 2017-12-08 A (+66d) | 2017-10-03 A → 2017-12-10 A (+68d) | 1d → 3d |  |  | 3 → 14 | baseline start 2017-10-03 → 2017-12-08; baseline finish 2017-10-03 → 2017-12-10 |
| 16 | **Ejecución** | 2017-10-04 A → 2017-12-11 A (+68d) | 2018-04-28 → 2018-07-02 (+65d) | 207d → 204d | 33% → 2% | 6d → 11d |  | baseline start 2017-10-04 → 2017-12-11; baseline finish 2018-04-28 → 2018-07-02 |
| 17 | **Labores preliminares** | 2017-10-04 A → 2017-12-11 A (+68d) | 2017-10-04 A → 2017-12-15 A (+72d) | 1d → 5d |  |  |  | baseline start 2017-10-04 → 2017-12-11; baseline finish 2017-10-04 → 2017-12-15 |
| 18 | Revisión y análisis de información recibida | 2017-10-04 A → 2017-12-11 A (+68d) | 2017-10-04 A → 2017-12-14 A (+71d) | 1d → 4d |  |  |  | baseline start 2017-10-04 → 2017-12-11; baseline finish 2017-10-04 → 2017-12-14 |
| 19 | Coordinación especialista saneamiento de predios UGDV | 2017-10-04 A → 2017-12-15 A (+72d) | 2017-10-04 A → 2017-12-15 A (+72d) |  |  |  | 15 → 18 | baseline start 2017-10-04 → 2017-12-15; baseline finish 2017-10-04 → 2017-12-15 |
| 20 | Coordinación en IGN para certificación de puntos control | 2017-10-04 A → 2017-12-15 A (+72d) | 2017-10-04 A → 2017-12-15 A (+72d) |  |  |  | 15 → 18 | baseline start 2017-10-04 → 2017-12-15; baseline finish 2017-10-04 → 2017-12-15 |
| 21 | Almacenamiento de información en GPS | 2017-10-04 A → 2017-12-15 A (+72d) | 2017-10-04 A → 2017-12-15 A (+72d) |  |  |  | 15 → 18 | baseline start 2017-10-04 → 2017-12-15; baseline finish 2017-10-04 → 2017-12-15 |
| 22 | **Labores de campo y gabinete (primer entregable)** | 2017-10-05 A → 2017-12-16 (+72d) | 2017-10-19 A → 2017-12-26 (+68d) | 15d → 11d | 100% → 0% | none → 0d |  | was named Labores en campo; baseline start 2017-10-05 → 2017-12-16; baseline finish 2017-10-19 → 2017-12-26 |
| 23 | Movilización a la zona de trabajo | 2017-10-05 A → 2017-12-16 (+72d) | 2017-10-05 A → 2017-12-16 (+72d) |  | 100% → 0% | none → 0d |  | baseline start 2017-10-05 → 2017-12-16; baseline finish 2017-10-05 → 2017-12-16 |
| 25 | Instalación de los puntos de control | 2017-10-06 A → 2017-12-18 (+73d) | 2017-10-07 A → 2017-12-20 (+74d) | 2d → 3d | 100% → 0% | none → 0d | 23 → 24 | was named Instalación de los puntos de control (7 puntos); baseline start 2017-10-06 → 2017-12-18; baseline finish 2017-10-07 → 2017-12-20 |
| 26 | Recopilación de información predial en Trujillo | 2017-10-07 A → 2017-12-21 (+75d) | 2017-10-08 A → 2017-12-22 (+75d) |  | 100% → 0% | none → 0d | 25FS-1d → 25 | baseline start 2017-10-07 → 2017-12-21; baseline finish 2017-10-08 → 2017-12-22 |
| 27 | Desmovilización | 2017-10-19 A → 2017-12-23 (+65d) | 2017-10-19 A → 2017-12-23 (+65d) |  | 100% → 0% | none → 0d | 33 → 26 | baseline start 2017-10-19 → 2017-12-23; baseline finish 2017-10-19 → 2017-12-23 |
| 29 | **Labores de campo y gabinete (segundo entregable)** | 2017-10-09 A → 2017-12-27 (+79d) | 2017-11-27 → 2018-02-02 (+67d) | 50d → 38d | 97% → 0% |  |  | was named Labores en gabinete (segundo entregable); baseline start 2017-10-09 → 2017-12-27; baseline finish 2017-11-27 → 2018-02-02 |
| 31 | Convocatoria a los titulares de los predios | 2017-10-07 A → 2017-12-28 (+82d) | 2017-10-08 A → 2017-12-31 (+84d) | 2d → 4d | 100% → 0% | none → 0d | 25FS-1d → 30 | baseline start 2017-10-07 → 2017-12-28; baseline finish 2017-10-08 → 2017-12-31 |
| 32 | Linderación de predios | 2017-10-09 A → 2017-12-30 (+82d) | 2017-10-18 A → 2018-01-13 (+87d) | 10d → 15d | 100% → 0% | none → 181d | 31 → 31FS-2d | baseline start 2017-10-09 → 2017-12-30; baseline finish 2017-10-18 → 2018-01-13 |
| 33 | Inventario de existencias | 2017-10-09 A → 2017-12-30 (+82d) | 2017-10-18 A → 2018-01-13 (+87d) | 10d → 15d | 100% → 0% | none → 0d | 31 → 31FS-2d | baseline start 2017-10-09 → 2017-12-30; baseline finish 2017-10-18 → 2018-01-13 |
| 34 | Elaboración de planos y MD para Búsqueda Catastral | 2017-10-16 A → 2018-01-04 (+80d) | 2017-10-31 A → 2018-01-14 (+75d) | 16d → 11d | 100% → 0% | none → 0d | Elaboración del ortomosaico y digitalización de prediosFS-5d → 33FS-10d | baseline start 2017-10-16 → 2018-01-04; baseline finish 2017-10-31 → 2018-01-14 |
| 36 | Elaboración de planos y MD para Anotaciones Preventivas | 2017-11-21 A → 2018-01-16 (+56d) | 2017-11-27 A → 2018-01-25 (+59d) | 7d → 10d | 100% → 0% | none → 169d | 40 → 35 | baseline start 2017-11-21 → 2018-01-16; baseline finish 2017-11-27 → 2018-01-25 |
| 37 | Conformación exp a SUNARP para obtener las Anotaciones Preventivas de Derecho de Vía | 2017-11-21 A → 2018-01-20 (+60d) | 2017-11-27 A → 2018-01-29 (+63d) | 7d → 10d | 100% → 0% | none → 0d | 40 → 35FS+4d | baseline start 2017-11-21 → 2018-01-20; baseline finish 2017-11-27 → 2018-01-29 |
| 38 | Informe del levantamiento físico | 2017-11-01 A → 2018-01-30 (+90d) | 2017-11-05 A → 2018-02-01 (+88d) | 5d → 3d | 100% → 0% | none → 162d | 34 → 37 | baseline start 2017-11-01 → 2018-01-30; baseline finish 2017-11-05 → 2018-02-01 |
| 40 | Gestión para la obtención de Certificado de Búsqueda Catastral | 2017-11-19 A → 2018-02-02 (+75d) | 2017-11-20 → 2018-02-02 (+74d) | 2d → 1d | 20% → 0% |  | 34FS+18d → 39 | baseline start 2017-11-19 → 2018-02-02; baseline finish 2017-11-20 → 2018-02-02 |
| 42 | **Labores de seguimiento (tercer entregable)** | 2017-11-01 A → 2018-02-03 (+94d) | 2017-12-17 → 2018-03-06 (+79d) | 47d → 32d | 23% → 0% | 138d → 0d |  | baseline start 2017-11-01 → 2018-02-03; baseline finish 2017-12-17 → 2018-03-06 |
| 43 | Elaboración de plano clave | 2017-11-28 A → 2018-02-03 (+67d) | 2017-11-30 A → 2018-02-03 (+65d) | 3d → 1d | 100% → 0% | none → 160d | 36 → 40 | baseline start 2017-11-28 → 2018-02-03; baseline finish 2017-11-30 → 2018-02-03 |
| 44 | Elaboración de plano de planta de los puntos de control | 2017-11-28 A → 2018-02-03 (+67d) | 2017-11-30 A → 2018-02-03 (+65d) | 3d → 1d | 100% → 0% | none → 0d | 36 → 40 | baseline start 2017-11-28 → 2018-02-03; baseline finish 2017-11-30 → 2018-02-03 |
| 45 | Elaboración de planos y MD para expediente de tasación | 2017-11-01 A → 2018-02-04 (+95d) | 2017-11-13 → 2018-02-18 (+97d) | 13d → 15d | 50% → 0% | 2.5d → 0d | 34 → 44 | baseline start 2017-11-01 → 2018-02-04; baseline finish 2017-11-13 → 2018-02-18 |
| 46 | Elaboración de expedientes para tasación y remisión a Vivienda | 2017-11-14 A → 2018-02-09 (+87d) | 2017-11-18 → 2018-02-23 (+97d) | 5d → 15d | 50% → 0% | 167d → 140d | 45 → 45FS-10d | baseline start 2017-11-14 → 2018-02-09; baseline finish 2017-11-18 → 2018-02-23 |
| 47 | Clasificación de certificados de búsqueda catastral | 2017-11-26 → 2018-02-09 (+75d) | 2017-12-05 → 2018-02-23 (+80d) | 10d → 15d |  |  | 40FS+5d → 45FS-10d | baseline start 2017-11-26 → 2018-02-09; baseline finish 2017-12-05 → 2018-02-23 |
| 48 | Informe del análisis técnico legal de la búsqueda catastral | 2017-11-28 → 2018-02-24 (+88d) | 2017-12-07 → 2018-02-28 (+83d) | 10d → 5d |  | 148d → 0d | 37 → 47 | baseline start 2017-11-28 → 2018-02-24; baseline finish 2017-12-07 → 2018-02-28 |
| 49 | Inscripción de las Anotaciones Preventiva_1 | 2017-12-08 → 2018-03-01 (+83d) | 2017-12-17 → 2018-03-03 (+76d) | 10d → 3d |  | 138d → 0d | 37FS+10d → 48 | baseline start 2017-12-08 → 2018-03-01; baseline finish 2017-12-17 → 2018-03-03 |
| 50 | Informe general Análisis Técnico Legal de todos los predios | 2017-12-06 → 2018-03-04 (+88d) | 2017-12-15 → 2018-03-06 (+81d) | 10d → 3d |  |  | 47 → 49 | baseline start 2017-12-06 → 2018-03-04; baseline finish 2017-12-15 → 2018-03-06 |
| 51 | **Labores de seguimiento (cuarto entregable)** | 2017-12-16 → 2018-03-07 (+81d) | 2018-02-28 → 2018-04-05 (+36d) | 75d → 30d |  |  |  | baseline start 2017-12-16 → 2018-03-07; baseline finish 2018-02-28 → 2018-04-05 |
| 52 | Expedientes a SBN para transferencia de bienes del Estado | 2018-01-15 → 2018-03-07 (+51d) | 2018-01-24 → 2018-03-16 (+51d) |  |  | 0d → 119d | 58 → 50 | baseline start 2018-01-15 → 2018-03-07; baseline finish 2018-01-24 → 2018-03-16 |
| 53 | Oficios y Notificaciones; Sujeto Pasivo, ocupantes y poseedor | 2018-01-25 → 2018-03-07 (+41d) | 2018-01-29 → 2018-03-16 (+46d) | 5d → 10d |  | 0d → 119d | 52 → 50 | baseline start 2018-01-25 → 2018-03-07; baseline finish 2018-01-29 → 2018-03-16 |
| 54 | Inscripción de las Anotaciones Preventiva_2 | 2018-01-30 → 2018-03-07 (+36d) | 2018-02-08 → 2018-03-08 (+28d) | 10d → 2d |  | 0d → 127d | 53 → 50 | baseline start 2018-01-30 → 2018-03-07; baseline finish 2018-02-08 → 2018-03-08 |
| 55 | Plan de saneamiento; transferencia Interestatal | 2018-02-09 → 2018-03-07 (+26d) | 2018-02-18 → 2018-03-18 (+28d) | 10d → 12d |  | 0d → 116d | 54 → 50 | baseline start 2018-02-09 → 2018-03-07; baseline finish 2018-02-18 → 2018-03-18 |
| 56 | Solicitud de devolución de exp de tasación y remisión PROVIAS | 2018-02-19 → 2018-03-19 (+28d) | 2018-02-28 → 2018-03-19 (+19d) | 10d → 1d |  | 0d → 116d |  | baseline start 2018-02-19 → 2018-03-19; baseline finish 2018-02-28 → 2018-03-19 |
| 57 | Publicaciones para posesionarios | 2017-12-16 → 2018-03-07 (+81d) | 2018-01-14 → 2018-04-05 (+81d) |  |  | 110d → 99d |  | baseline start 2017-12-16 → 2018-03-07; baseline finish 2018-01-14 → 2018-04-05 |
| 58 | Publicaciones para Sujeto Pasivo | 2017-12-16 → 2018-03-07 (+81d) | 2018-01-14 → 2018-04-05 (+81d) |  |  |  |  | baseline start 2017-12-16 → 2018-03-07; baseline finish 2018-01-14 → 2018-04-05 |
| 59 | **Labores de seguimiento (quinto, sexto y séptimo entregable)** | 2018-03-01 → 2018-04-06 (+36d) | 2018-04-28 → 2018-07-02 (+65d) | 59d → 88d |  |  |  | baseline start 2018-03-01 → 2018-04-06; baseline finish 2018-04-28 → 2018-07-02 |
| 60 | Informe del quinto entregable | 2018-03-01 → 2018-04-06 (+36d) | 2018-03-10 → 2018-05-04 (+55d) | 10d → 29d |  |  | 56 → 58 | baseline start 2018-03-01 → 2018-04-06; baseline finish 2018-03-10 → 2018-05-04 |
| 61 | Elaboración de exp de independización o inmatriculación | 2018-03-11 → 2018-05-05 (+55d) | 2018-03-20 → 2018-05-14 (+55d) |  |  | 0d → 60d |  | was named Elaboración de expe de independización o inmatriculación; baseline start 2018-03-11 → 2018-05-05; baseline finish 2018-03-20 → 2018-05-14 |
| 62 | Informe de sexto entregable | 2018-03-21 → 2018-05-05 (+45d) | 2018-03-30 → 2018-06-04 (+66d) | 10d → 31d |  |  | 61 → 60 | baseline start 2018-03-21 → 2018-05-05; baseline finish 2018-03-30 → 2018-06-04 |
| 63 | Gestión de RM, RD, Formularios Registrales y contratos | 2018-03-31 → 2018-06-05 (+66d) | 2018-04-09 → 2018-06-14 (+66d) |  |  |  |  | baseline start 2018-03-31 → 2018-06-05; baseline finish 2018-04-09 → 2018-06-14 |
| 64 | Gestión de inscripción en SUNARP | 2018-04-10 → 2018-06-15 (+66d) | 2018-04-19 → 2018-06-24 (+66d) |  |  |  |  | baseline start 2018-04-10 → 2018-06-15; baseline finish 2018-04-19 → 2018-06-24 |
| 65 | Informe Final | 2018-04-20 → 2018-06-25 (+66d) | 2018-04-28 → 2018-07-02 (+65d) | 9d → 8d |  |  |  | baseline start 2018-04-20 → 2018-06-25; baseline finish 2018-04-28 → 2018-07-02 |
| 66 | **Cierre de Proyecto** | 2018-04-29 → 2018-07-03 (+65d) | 2018-05-04 → 2018-07-13 (+70d) | 6d → 11d |  |  |  | baseline start 2018-04-29 → 2018-07-03; baseline finish 2018-05-04 → 2018-07-13 |
| 67 | Control de calidad | 2018-04-29 → 2018-07-03 (+65d) | 2018-04-29 → 2018-07-03 (+65d) |  |  |  |  | baseline start 2018-04-29 → 2018-07-03; baseline finish 2018-04-29 → 2018-07-03 |
| 68 | Entrega al cliente | 2018-04-30 → 2018-07-04 (+65d) | 2018-04-30 → 2018-07-04 (+65d) |  |  | 4d → 9d |  | baseline start 2018-04-30 → 2018-07-04; baseline finish 2018-04-30 → 2018-07-04 |
| 69 | Cierre de Proyecto | 2018-05-01 → 2018-07-05 (+65d) | 2018-05-04 → 2018-07-13 (+70d) | 4d → 9d |  |  |  | baseline start 2018-05-01 → 2018-07-05; baseline finish 2018-05-04 → 2018-07-13 |

## Version 5 (saved 2017-12-21, file _04 Gantt_Chiclayo-Lambayeque.mpp)

Note of the change: Serga

Last finish stays 2018-07-13. Complete tasks 8 → 11.

Changed:

| ID | Task | Start | Finish | Complete | Total float | Other |
| --- | --- | --- | --- | --- | --- | --- |
| 1 | **PROVIAS_AUTOPISTA DEL SOL_CHICLAYO-LAMBAYEQUE (km 790+542 AL km 000+846)** |  |  | 3% → 5% |  | was named PROVIAS_AUTOPISTA DEL SOL_GUADALUPE - SAN JOSE DEL MORO (km 701+804 AL km 709+531) |
| 16 | **Ejecución** |  |  | 2% → 3% |  |  |
| 22 | **Labores de campo y gabinete (primer entregable)** | 2017-12-16 A |  | 0% → 45% |  |  |
| 23 | Movilización a la zona de trabajo | 2017-12-16 A | 2017-12-16 A | 0% → 100% | 0d → none |  |
| 24 | Reconocimiento de la zona de trabajo | 2017-12-17 A | 2017-12-17 A | 0% → 100% | 0d → none |  |
| 25 | Instalación de los puntos de control | 2017-12-18 A | 2017-12-20 A | 0% → 100% | 0d → none |  |

## Version 6 (data date 2018-01-20, saved 2018-02-19, file 2_04 Gantt_Chiclayo-Lambayeque_170218.mpp)

Note of the change: Serga

Last finish stays 2018-07-13. Complete tasks 11 → 26.

Changed:

| ID | Task | Start | Finish | Complete | Total float |
| --- | --- | --- | --- | --- | --- |
| 1 | **PROVIAS_AUTOPISTA DEL SOL_CHICLAYO-LAMBAYEQUE (km 790+542 AL km 000+846)** |  |  | 5% → 26% |  |
| 4 | Primer entregable | 2017-12-26 A | 2017-12-26 A | 0% → 100% | 200d → none |
| 5 | Segundo entregable | 2018-02-02 A | 2018-02-02 A | 0% → 100% | 162d → none |
| 16 | **Ejecución** |  |  | 3% → 26% |  |
| 22 | **Labores de campo y gabinete (primer entregable)** |  | 2017-12-26 A | 45% → 100% | 0d → none |
| 26 | Recopilación de información predial en Trujillo | 2017-12-21 A | 2017-12-22 A | 0% → 100% | 0d → none |
| 27 | Desmovilización | 2017-12-23 A | 2017-12-23 A | 0% → 100% | 0d → none |
| 28 | Procesamiento de información | 2017-12-24 A | 2017-12-26 A | 0% → 100% | 0d → none |
| 29 | **Labores de campo y gabinete (segundo entregable)** | 2017-12-27 A |  | 0% → 82% | 0d → 161d |
| 30 | Movilización a la zona de trabajo | 2017-12-27 A | 2017-12-27 A | 0% → 100% | 0d → none |
| 31 | Convocatoria a los titulares de los predios | 2017-12-28 A | 2017-12-31 A | 0% → 100% | 0d → none |
| 32 | Linderación de predios | 2017-12-30 A | 2018-01-13 A | 0% → 100% | 181d → none |
| 33 | Inventario de existencias | 2017-12-30 A | 2018-01-13 A | 0% → 100% | 0d → none |
| 34 | Elaboración de planos y MD para Búsqueda Catastral | 2018-01-04 A | 2018-01-14 A | 0% → 100% | 0d → none |
| 35 | Presentación a SUNARP de búsqueda catastral | 2018-01-15 A | 2018-01-15 A | 0% → 100% | 0d → none |
| 36 | Elaboración de planos y MD para Anotaciones Preventivas | 2018-01-16 A |  | 0% → 45% |  |
| 37 | Conformación exp a SUNARP para obtener las Anotaciones Preventivas de Derecho de Vía | 2018-01-20 A |  | 0% → 20% | 0d → 165d |
| 38 | Informe del levantamiento físico | 2018-01-30 A | 2018-02-01 A | 0% → 100% | 162d → none |
| 39 | Informe de actividades | 2018-01-30 A | 2018-02-01 A | 0% → 100% | 0d → none |
| 40 | Gestión para la obtención de Certificado de Búsqueda Catastral | 2018-02-02 A | 2018-02-02 A | 0% → 100% | 0d → none |
| 41 | Entrega del segundo entregable | 2018-02-02 A | 2018-02-02 A | 0% → 100% | 161d → none |
| 42 | **Labores de seguimiento (tercer entregable)** | 2018-02-03 A |  | 0% → 16% | 0d → 129d |
| 45 | Elaboración de planos y MD para expediente de tasación | 2018-02-04 A |  | 0% → 30% |  |
| 46 | Elaboración de expedientes para tasación y remisión a Vivienda | 2018-02-09 A |  | 0% → 30% |  |

## Version 7 (data date 2018-01-20, saved 2018-02-24, file 3_04 Gantt_Chiclayo-Lambayeque_240218.mpp)

Note of the change: Serga

Last finish stays 2018-07-13.

Changed:

| ID | Task | Start | Complete | Total float |
| --- | --- | --- | --- | --- |
| 1 | **PROVIAS_AUTOPISTA DEL SOL_CHICLAYO-LAMBAYEQUE (km 790+542 AL km 000+846)** |  | 26% → 28% |  |
| 16 | **Ejecución** |  | 26% → 28% |  |
| 42 | **Labores de seguimiento (tercer entregable)** |  | 16% → 26% |  |
| 43 | Elaboración de plano clave | 2018-02-03 A | 0% → 15% |  |
| 44 | Elaboración de plano de planta de los puntos de control | 2018-02-03 A | 0% → 15% | 4.5d → 7.5d |
| 45 | Elaboración de planos y MD para expediente de tasación |  | 30% → 50% |  |
| 46 | Elaboración de expedientes para tasación y remisión a Vivienda |  | 30% → 50% |  |
