# Los Calatos_Cronograma_Gestión Predial

How a schedule from MS Project changed from version to version. A marks actual dates.

## Version 1 (saved 2017-10-23, file _Los Calatos_Cronograma_Pipeline Corridor.mpp)

Note of the change: Serga

| ID | WBS | Task | Duration | Start | Finish | Predecessors | Total float |
| --- | --- | --- | --- | --- | --- | --- | --- |
| 1 | 1 | **Los Calatos Pipeline corridor** | 64d | 2017-10-16 | 2017-12-18 |  |  |
| 2 | 1.1 | **Hitos** | 57d | 2017-10-16 | 2017-12-11 |  | 0d |
| 3 |  | Aceptación de la propuesta | 0d | 2017-10-16 | 2017-10-16 |  | 0d |
| 4 |  | Fin de Identificación de Propietarios | 0d | 2017-11-19 | 2017-11-19 | 12 | 25d |
| 5 |  | Fin de Evaluación de estrategia | 0d | 2017-12-04 | 2017-12-04 | 13 | 10d |
| 6 |  | Fin de Calendario de Ejecución | 0d | 2017-12-11 | 2017-12-11 | 15 | 3d |
| 7 | 1.2 | **Inicio y Planificación** | 5d | 2017-10-16 | 2017-10-20 |  | 0d |
| 8 |  | Conformación y alineamiento de equipo | 3d | 2017-10-16 | 2017-10-18 | 3 | 0d |
| 9 |  | Elaboración del Plan de Ejecución | 2d | 2017-10-19 | 2017-10-20 | 8 | 0d |
| 10 |  | Aprobación del Plan de Ejecución | 0d | 2017-10-20 | 2017-10-20 | 9 | 0d |
| 11 | 1.3 | **Ejecución y Monitoreo** | 53d | 2017-10-21 | 2017-12-12 | 7 | 0d |
| 12 |  | Identificación de propietarios | 30d | 2017-10-21 | 2017-11-19 |  | 0d |
| 13 |  | Evaluación de Estrategia para adquisición de predios | 15d | 2017-11-20 | 2017-12-04 | 12 | 0d |
| 14 |  | Estimación del Valor de las Tierras | 12d | 2017-11-20 | 2017-12-01 | 12 | 3d |
| 15 |  | Elaboración del calendario de ejecución | 7d | 2017-12-05 | 2017-12-11 | 14, 13 | 0d |
| 16 |  | Elaboración de informe final del servicio | 1d | 2017-12-12 | 2017-12-12 | 15 | 0d |
| 17 | 1.4 | **Cierre de Proyecto** | 6d | 2017-12-13 | 2017-12-18 | 11 | 0d |
| 18 |  | Informe de gestión proyecto | 4d | 2017-12-13 | 2017-12-16 | 16 | 0d |
| 19 |  | Fin de proyecto | 2d | 2017-12-17 | 2017-12-18 | 18 | 0d |

## Version 2 (saved 2017-11-10, file 4_Los Calatos_Cronograma_Pipeline Corridor_v1011.mpp)

Note of the change: Serga

Last finish stays 2017-12-18. Complete tasks 0 → 4.

Changed:

| ID | Task | Start | Finish | Complete | Total float |
| --- | --- | --- | --- | --- | --- |
| 1 | **Los Calatos Pipeline corridor** | 2017-10-16 A |  | 0% → 48% |  |
| 2 | **Hitos** | 2017-10-16 A |  |  | 0d → 7d |
| 3 | Aceptación de la propuesta | 2017-10-16 A | 2017-10-16 A | 0% → 100% | 0d → none |
| 7 | **Inicio y Planificación** | 2017-10-16 A | 2017-10-20 A | 0% → 100% | 0d → none |
| 8 | Conformación y alineamiento de equipo | 2017-10-16 A | 2017-10-18 A | 0% → 100% | 0d → none |
| 9 | Elaboración del Plan de Ejecución | 2017-10-19 A | 2017-10-20 A | 0% → 100% | 0d → none |
| 10 | Aprobación del Plan de Ejecución | 2017-10-20 A | 2017-10-20 A | 0% → 100% | 0d → none |
| 11 | **Ejecución y Monitoreo** | 2017-10-21 A |  | 0% → 49% |  |
| 12 | Identificación de propietarios | 2017-10-21 A |  | 0% → 90% | 0d → 3.15d |
| 13 | Evaluación de Estrategia para adquisición de predios | 2017-11-20 A |  | 0% → 30% | 0d → 0.15d |
| 16 | Elaboración de informe final del servicio | 2017-12-12 A |  | 0% → 15% |  |
