# Proyecto Alicia

How a schedule from MS Project changed from version to version. A marks actual dates.

## Version 1 (saved 2017-05-02, file v1_00_Cronograma GANTT_DIAG_Caraveli_v020517.mpp)

Note of the change: Serga

| ID | WBS | Task | Duration | Start | Finish | Predecessors | Total float |
| --- | --- | --- | --- | --- | --- | --- | --- |
| 1 | 1 | **Proyecto: IBEREOLICA - Diagnóstico de Derechos CARAVELI** | 55d | 2017-04-27 | 2017-06-30 |  | 0d |
| 2 | 1.1 | **Hitos** | 52d | 2017-04-27 | 2017-06-27 |  | 3d |
| 3 |  | Aceptación de la propuesta | 0d | 2017-04-27 | 2017-04-27 | 8SS | 55d |
| 4 |  | Informe de proceso de adquisición | 0d | 2017-06-05 | 2017-06-05 | 16 | 22d |
| 5 |  | Entrega de informe de diagnóstico de derechos | 0d | 2017-06-27 | 2017-06-27 | 23 | 3d |
| 6 | 1.2 | **Inicio y Planificación** | 4d | 2017-04-27 | 2017-05-02 |  | 0d |
| 7 |  | Conformación y alineamiento del equipo de trabajo | 1d | 2017-04-27 | 2017-04-27 |  | 0d |
| 8 |  | Revisión de información antecedente | 4d | 2017-04-27 | 2017-05-02 | 7SS | 0d |
| 9 |  | Reunión de inicio | 1d | 2017-05-02 | 2017-05-02 | 8FS-1d | 0d |
| 10 | 1.3 | **Ejecución y Monitoreo** | 43d | 2017-05-02 | 2017-06-20 |  | 0d |
| 11 | 1.3.1 | **Diagnóstico de Derechos** | 17d | 2017-05-08 | 2017-05-26 |  | 30d |
| 12 |  | Movilización a las zonas registrales 1 | 5d | 2017-05-08 | 2017-05-12 | 9FS+4d | 30d |
| 13 |  | Movilización a las zonas registrales 2 | 5d | 2017-05-22 | 2017-05-26 | 12FS+7d | 30d |
| 14 | 1.3.2 | **Desarrollo del Diagnóstico** | 43d | 2017-05-02 | 2017-06-20 |  | 0d |
| 15 |  | Recopilación de información (RRPP/Otras instituciones) | 25d | 2017-05-02 | 2017-05-30 | 9SS | 0d |
| 16 |  | Elaboración del informe del proceso de adquisición | 5d | 2017-05-31 | 2017-06-05 | 15 | 22d |
| 17 |  | Evaluación y análisis de información obtenida | 27d | 2017-05-16 | 2017-06-15 | 15SS+12d | 0d |
| 18 |  | Elaboración del informe de diagnóstico | 5d | 2017-06-15 | 2017-06-20 | 17FS-1d | 0d |
| 19 |  | Composición del mosaico cartográfico | 43d | 2017-05-02 | 2017-06-20 | 15SS | 9d |
| 20 |  | Verificación en campo | 2d | 2017-05-10 | 2017-05-11 | 9FS+6d | 43d |
| 21 | 1.4 | **Cierre del Proyecto** | 9d | 2017-06-21 | 2017-06-30 |  | 0d |
| 22 |  | Control de calidad | 5d | 2017-06-21 | 2017-06-26 | 18 | 0d |
| 23 |  | Entrega del informe de diagnóstico de derechos | 1d | 2017-06-27 | 2017-06-27 | 22 | 0d |
| 24 |  | Acta de cierre | 3d | 2017-06-28 | 2017-06-30 | 23 | 0d |

## Version 2 (data date 2017-05-08, saved 2017-05-08, file Cronograma GANTT_DIAG_Caraveli_v260517_01_Cronograma GANTT_DIAG_Caraveli_v050517.mpp)

Note of the change: Serga

Last finish stays 2017-06-30. Complete tasks 0 → 4.

Added:

| ID | Task | Duration | Start | Finish | Constraint |
| --- | --- | --- | --- | --- | --- |
| 16 | Presentación diagnóstico preliminar | 1d | 2017-05-22 | 2017-05-22 | start no earlier than 2017-05-22 |

Changed:

| ID | Task | Start | Finish | Duration | Complete | Total float | Other |
| --- | --- | --- | --- | --- | --- | --- | --- |
| 1 | **Proyecto: IBEREOLICA - Diagnóstico de Derechos CARAVELI** | 2017-04-27 A |  |  | 0% → 12% |  |  |
| 2 | **Hitos** | 2017-04-27 A |  |  |  |  |  |
| 3 | Aceptación de la propuesta | 2017-04-27 A | 2017-04-27 A |  | 0% → 100% | 55d → none |  |
| 6 | **Inicio y Planificación** | 2017-04-27 A | 2017-05-02 A |  | 0% → 100% | 0d → none |  |
| 7 | Conformación y alineamiento del equipo de trabajo | 2017-04-27 A | 2017-04-27 A |  | 0% → 100% | 0d → none |  |
| 8 | Revisión de información antecedente | 2017-04-27 A | 2017-05-02 A |  | 0% → 100% | 0d → none |  |
| 9 | Reunión de inicio | 2017-05-02 A | 2017-05-02 A |  | 0% → 100% | 0d → none |  |
| 10 | **Ejecución y Monitoreo** | 2017-05-02 A |  |  | 0% → 9% | 0d → 9d |  |
| 11 | **Diagnóstico de Derechos** | 2017-05-08 → 2017-05-09 (+1d) | 2017-05-26 → 2017-05-25 (-1d) | 17d → 15d |  | 30d → 31d |  |
| 12 | Movilización a las zonas registrales 1 | 2017-05-08 → 2017-05-09 (+1d) | 2017-05-12 → 2017-05-11 (-1d) | 5d → 3d |  | 30d → 31d | constraint none → finish no earlier than 2017-05-11 |
| 13 | Movilización a las zonas registrales 2 | 2017-05-22 → 2017-05-20 (-2d) | 2017-05-26 → 2017-05-25 (-1d) |  |  | 30d → 31d |  |
| 14 | **Desarrollo del Diagnóstico** | 2017-05-02 A |  |  | 0% → 9% | 0d → 9d |  |
| 15 | Gestión de consultas en entidades públicas(RRPP/Otras instituciones) | 2017-05-02 A |  |  | 0% → 20% | 0d → 22d | was named Recopilación de información (RRPP/Otras instituciones) |
| 20 | Composición del mosaico cartográfico | 2017-05-02 A |  |  | 0% → 12% |  |  |

## Version 3 (data date 2017-05-08, saved 2017-05-12, file Cronograma GANTT_DIAG_Caraveli_v260517_01_Cronograma GANTT_DIAG_Caraveli_v120517.mpp)

Note of the change: Serga

Last finish stays 2017-06-30. Complete tasks 4 → 6.

Changed:

| ID | Task | Start | Finish | Complete | Total float |
| --- | --- | --- | --- | --- | --- |
| 1 | **Proyecto: IBEREOLICA - Diagnóstico de Derechos CARAVELI** |  |  | 12% → 21% |  |
| 10 | **Ejecución y Monitoreo** |  |  | 9% → 18% |  |
| 11 | **Diagnóstico de Derechos** | 2017-05-09 A |  | 0% → 38% |  |
| 12 | Movilización a las zonas registrales 1 | 2017-05-09 A | 2017-05-11 A | 0% → 100% | 31d → none |
| 14 | **Desarrollo del Diagnóstico** |  |  | 9% → 17% |  |
| 15 | Gestión de consultas en entidades públicas(RRPP/Otras instituciones) |  |  | 20% → 30% |  |
| 20 | Composición del mosaico cartográfico |  |  | 12% → 20% |  |
| 21 | Verificación en campo | 2017-05-10 A | 2017-05-11 A | 0% → 100% | 43d → none |

## Version 4 (data date 2017-05-08, saved 2017-05-19, file Cronograma GANTT_DIAG_Caraveli_v260517_01_Cronograma GANTT_DIAG_Caraveli_v190517.mpp)

Note of the change: Serga

Last finish stays 2017-06-30.

Changed:

| ID | Task | Start | Complete |
| --- | --- | --- | --- |
| 1 | **Proyecto: IBEREOLICA - Diagnóstico de Derechos CARAVELI** |  | 21% → 28% |
| 10 | **Ejecución y Monitoreo** |  | 18% → 26% |
| 14 | **Desarrollo del Diagnóstico** |  | 17% → 26% |
| 15 | Gestión de consultas en entidades públicas(RRPP/Otras instituciones) |  | 30% → 35% |
| 18 | Evaluación y análisis de información obtenida | 2017-05-16 A | 0% → 15% |
| 20 | Composición del mosaico cartográfico |  | 20% → 30% |

## Version 5 (data date 2017-05-08, saved 2017-05-26, file Cronograma GANTT_DIAG_Caraveli_v260517_01_Cronograma GANTT_DIAG_Caraveli_v260517.mpp)

Note of the change: Serga

Last finish stays 2017-06-30. Complete tasks 6 → 8.

Changed:

| ID | Task | Start | Finish | Complete | Total float |
| --- | --- | --- | --- | --- | --- |
| 1 | **Proyecto: IBEREOLICA - Diagnóstico de Derechos CARAVELI** |  |  | 28% → 68% |  |
| 10 | **Ejecución y Monitoreo** |  |  | 26% → 72% |  |
| 11 | **Diagnóstico de Derechos** |  | 2017-05-25 A | 38% → 100% | 31d → none |
| 13 | Movilización a las zonas registrales 2 | 2017-05-20 A | 2017-05-25 A | 0% → 100% | 31d → none |
| 14 | **Desarrollo del Diagnóstico** |  |  | 26% → 70% |  |
| 15 | Gestión de consultas en entidades públicas(RRPP/Otras instituciones) |  |  | 35% → 75% | 22d → 22.5d |
| 16 | Presentación diagnóstico preliminar | 2017-05-22 A | 2017-05-22 A | 0% → 100% | 34d → none |
| 17 | Elaboración del informe del proceso de adquisición | 2017-05-31 A |  | 0% → 10% |  |
| 18 | Evaluación y análisis de información obtenida |  |  | 15% → 75% | 0d → 0.5d |
| 19 | Elaboración del informe de diagnóstico | 2017-06-15 A |  | 0% → 10% |  |
| 20 | Composición del mosaico cartográfico |  |  | 30% → 75% |  |

## Version 6 (data date 2017-05-08, saved 2017-06-03, file Cronograma GANTT_DIAG_Caraveli_v260517_01_Cronograma GANTT_DIAG_Caraveli_v020617.mpp)

Note of the change: Serga

Last finish stays 2017-06-30. Complete tasks 8 → 13.

Changed:

| ID | Task | Start | Finish | Complete | Total float |
| --- | --- | --- | --- | --- | --- |
| 1 | **Proyecto: IBEREOLICA - Diagnóstico de Derechos CARAVELI** |  |  | 68% → 95% |  |
| 10 | **Ejecución y Monitoreo** |  | 2017-06-20 A | 72% → 100% | 9d → none |
| 14 | **Desarrollo del Diagnóstico** |  | 2017-06-20 A | 70% → 100% | 9d → none |
| 15 | Gestión de consultas en entidades públicas(RRPP/Otras instituciones) |  | 2017-05-30 A | 75% → 100% | 22.5d → none |
| 17 | Elaboración del informe del proceso de adquisición |  | 2017-06-05 A | 10% → 100% | 22d → none |
| 18 | Evaluación y análisis de información obtenida |  | 2017-06-15 A | 75% → 100% | 0.5d → none |
| 19 | Elaboración del informe de diagnóstico |  | 2017-06-20 A | 10% → 100% | 0d → none |
| 20 | Composición del mosaico cartográfico |  | 2017-06-20 A | 75% → 100% | 9d → none |
| 22 | **Cierre del Proyecto** | 2017-06-21 A |  | 0% → 28% |  |
| 23 | Control de calidad | 2017-06-21 A |  | 0% → 50% |  |

## Version 7 (data date 2017-05-08, saved 2017-06-07, file Cronograma GANTT_DIAG_Caraveli_v260517_01_Cronograma GANTT_DIAG_Caraveli_v070617.mpp)

Note of the change: Serga

Last finish stays 2017-06-30. Complete tasks 13 → 17.

Changed:

| ID | Task | Start | Finish | Complete | Total float |
| --- | --- | --- | --- | --- | --- |
| 1 | **Proyecto: IBEREOLICA - Diagnóstico de Derechos CARAVELI** |  |  | 95% → 98% |  |
| 2 | **Hitos** |  | 2017-06-27 A | 0% → 100% | 3d → none |
| 4 | Informe de proceso de adquisición | 2017-06-05 A | 2017-06-05 A | 0% → 100% | 22d → none |
| 5 | Entrega de informe de diagnóstico de derechos | 2017-06-27 A | 2017-06-27 A | 0% → 100% | 3d → none |
| 22 | **Cierre del Proyecto** |  |  | 28% → 67% |  |
| 23 | Control de calidad |  | 2017-06-26 A | 50% → 100% | 0d → none |
| 24 | Entrega del informe de diagnóstico de derechos | 2017-06-27 A | 2017-06-27 A | 0% → 100% | 0d → none |
